# chart pro del trabajo final

Schedule from MS Project, 2015-08-24 to 2016-04-26, costs in $.

## Calendars

- Standard: Mon-Fri 08:00-12:00, 13:00-17:00; Sat-Sun off.

## Resources

| Resource | Rate |
| --- | --- |
| R.S | 50 |
| K.A | 80 |
| K.B | 10 |
| J.T | 25 |
| J.V | 25 |
| P.T | 35 |
| R.M | 35 |
| E.CH | 25 |
| V.C | 35 |
| Emp.EDTS |  |
| M.Q | 35 |
| E.S | 25 |
| F.K | 35 |
| D.F | 25 |
| D.S | 25 |
| D.R | 25 |
| A.L | 35 |

## Schedule

| ID | WBS | Task | Type | Duration | Start | Finish | Predecessors | Total slack | Free slack | Resources | Work | Cost |
| --- | --- | --- | --- | --- | --- | --- | --- | --- | --- | --- | --- | --- |
| 1 | 1 | **CPMPA** |  | 177d? | 2015-08-24 | 2016-04-26 |  | 0d |  |  | 1680h | 230,189 |
| 2 | 1.1 | **Gestión de proyecto** |  | 11d? | 2015-08-24 | 2015-09-07 |  | 20d | 0d |  | 136h | 33,580 |
| 3 | 1.1.1 | **Iniciación** |  | 6d? | 2015-08-24 | 2015-08-31 |  | 20d | 0d |  | 80h | 19,960 |
| 4 | 1.1.1.1 | **Project charter** |  | 3d | 2015-08-24 | 2015-08-26 |  | 20d | 0d |  | 40h | 6,480 |
| 5 | 1.1.1.1.1 | Reunión con el sponsor |  | 1d | 2015-08-24 | 2015-08-24 |  | 20d | 0d | R.S; K.A | 16h | 2,040 |
| 6 | 1.1.1.1.2 | Elaborar Project Charter |  | 1d | 2015-08-25 | 2015-08-25 | 5 | 20d | 0d | R.S | 8h | 2,400 |
| 7 | 1.1.1.1.3 | Revisar Project Charter |  | 1d | 2015-08-26 | 2015-08-26 | 6 | 20d |  | R.S; K.A | 16h | 2,040 |
| 8 | 1.1.1.2 | **Scope Statement** |  | 3d? | 2015-08-27 | 2015-08-31 | 4 | 20d |  |  | 40h | 13,480 |
| 9 | 1.1.1.2.1 | Reunión con el sponsor |  | 1d? | 2015-08-27 | 2015-08-27 |  | 20d | 0d | R.S; K.A | 16h | 3,040 |
| 10 | 1.1.1.2.2 | Elaborar Scope Statement |  | 1d? | 2015-08-28 | 2015-08-28 | 9 | 20d | 0d | R.S | 8h | 6,400 |
| 11 | 1.1.1.2.3 | Revisar Scope Statement |  | 1d? | 2015-08-31 | 2015-08-31 | 10 | 20d |  | K.A; R.S | 16h | 4,040 |
| 12 | 1.1.2 | **Plan de proyecto** |  | 1d? | 2015-09-01 | 2015-09-01 | 3 | 20d | 0d |  | 8h | 3,000 |
| 13 | 1.1.2.1 | Elaborar el plan del proyecto |  | 1d? | 2015-09-01 | 2015-09-01 |  | 20d |  | R.S | 8h | 3,000 |
| 14 | 1.1.3 | **Informe de estado del proyecto** |  | 1d? | 2015-09-02 | 2015-09-02 | 12 | 20d | 0d |  |  | 4,500 |
| 15 | 1.1.3.1 | Elaborar informe del estado de proyecto |  | 1d? | 2015-09-02 | 2015-09-02 |  | 20d |  |  |  | 4,500 |
| 16 | 1.1.4 | **Reunión de coordinación con el cliente** |  | 3d | 2015-09-03 | 2015-09-07 | 14 | 20d | 0d |  | 48h | 6,120 |
| 17 | 1.1.4.1 | Realizar coordinación |  | 3d | 2015-09-03 | 2015-09-07 |  | 20d |  | R.S; K.A | 48h | 6,120 |
| 18 | 1.1.5 | Fin de la Gestión de proyecto | milestone | 0d | 2015-09-07 | 2015-09-07 | 16 | 20d |  |  |  |  |
| 19 | 1.2 | **Ingeniería de detalle** |  | 160d | 2015-09-08 | 2016-04-18 | 2 | 6d | 0d |  | 1544h | 129,209 |
| 20 | 1.2.1 | **Generales** |  | 13d | 2015-09-08 | 2015-09-24 |  | 20d | 0d |  | 144h | 11,600 |
| 21 | 1.2.1.1 | Condiciones del lugar |  | 4d | 2015-09-08 | 2015-09-11 |  | 20d | 0d |  |  | 1,600 |
| 22 | 1.2.1.2 | **Estimación de costos** |  | 9d | 2015-09-14 | 2015-09-24 | 21 | 20d |  |  | 144h | 10,000 |
| 23 | 1.2.1.2.1 | Realizar todos los metrados |  | 3d | 2015-09-14 | 2015-09-16 |  | 20d | 0d | J.T; J.V; P.T | 72h | 4,540 |
| 24 | 1.2.1.2.2 | Elaborar estimación de costos |  | 5d | 2015-09-17 | 2015-09-23 | 23 | 20d | 0d | R.M | 40h | 2,400 |
| 25 | 1.2.1.2.3 | Revisar estimación de costos |  | 4d | 2015-09-21 | 2015-09-24 | 24FS-3d | 20d |  | K.A | 32h | 3,060 |

| ID | WBS | Task | Duration | Start | Finish | Predecessors | Total slack | Free slack | Resources | Work | Cost |
| --- | --- | --- | --- | --- | --- | --- | --- | --- | --- | --- | --- |
| 26 | 1.2.2 | **Procesos** | 27d | 2015-09-25 | 2015-11-02 | 20 | 18d | 0d |  | 248h | 21,070 |
| 27 | 1.2.2.1 | **Sistema para el mantenimiento y procesamiento del agua** | 15d | 2015-09-25 | 2015-10-15 |  | 30d | 1d |  | 72h | 6,100 |
| 28 | 1.2.2.1.1 | Revisar información | 3d | 2015-09-25 | 2015-09-29 |  | 30d | 0d | J.T; R.S | 32h | 2,000 |
| 29 | 1.2.2.1.2 | Elaborar planos y documentos del Sistema para el mantenimiento y procesamiento del agua | 3d | 2015-09-30 | 2015-10-13 | 28FS-2d | 30d | 0d | J.T | 24h | 2,600 |
| 30 | 1.2.2.1.3 | Revisar planos y documentos del Sistema para el mantenimiento y procesamiento del agua | 2d | 2015-10-14 | 2015-10-15 | 29FS-2d | 30d |  | R.S | 16h | 1,500 |
| 31 | 1.2.2.2 | **Planta Calmilk** | 12d | 2015-09-28 | 2015-10-13 | 27SS | 32d | 3d |  | 88h | 8,000 |
| 32 | 1.2.2.2.1 | Revisar información | 4d | 2015-09-28 | 2015-10-05 |  | 32d | 0d | J.T; R.S | 32h | 2,700 |
| 33 | 1.2.2.2.2 | Elaborar planos y documentos de la Planta Calmilk | 5d | 2015-10-06 | 2015-10-12 | 32 | 32d | 0d | J.T | 40h | 3,000 |
| 34 | 1.2.2.2.3 | Revisar planos y documentos de la Planta Calmilk | 2d | 2015-10-12 | 2015-10-13 | 33FS-1d | 32d |  | R.S | 16h | 2,300 |
| 35 | 1.2.2.3 | **Manejo de reactivos** | 23d | 2015-10-01 | 2015-11-02 | 31SS | 16d |  |  | 88h | 6,970 |
| 36 | 1.2.2.3.1 | Revisar información | 4d | 2015-10-01 | 2015-10-15 |  | 16d | 0d | J.T; R.S | 32h | 2,200 |
| 37 | 1.2.2.3.2 | Elaborar planos y documentos para el manejo de reactivos | 5d | 2015-10-26 | 2015-10-30 | 36 | 18d | 0d | J.T | 40h | 3,600 |
| 38 | 1.2.2.3.3 | Revisar planos y documentos para el manejo de reactivos | 2d | 2015-10-30 | 2015-11-02 | 37FS-1d | 18d |  | R.S | 16h | 1,170 |
| 39 | 1.2.3 | **Mecánica** | 27d | 2015-10-30 | 2015-12-07 | 26FS-2d | 17d | 0d |  | 184h | 17,060 |
| 40 | 1.2.3.1 | **Sistema de impulsión** | 7d | 2015-10-30 | 2015-11-09 |  | 18d | 0d |  | 88h | 5,500 |
| 41 | 1.2.3.1.1 | Revisar información | 2d | 2015-10-30 | 2015-11-02 |  | 18d | 0d | E.CH; V.C | 32h | 1,460 |
| 42 | 1.2.3.1.2 | Elaborar planos para líneas de impulsión | 4d | 2015-11-03 | 2015-11-06 | 41FS-1d | 18d | 0d | E.CH | 32h | 2,700 |
| 43 | 1.2.3.1.3 | Revisar y aprobar planos para líneas de impulsión | 3d | 2015-11-05 | 2015-11-09 | 42FS-2d | 18d |  | V.C | 24h | 1,340 |
| 44 | 1.2.3.2 | **Sistema para el mantenimiento y procesamiento de agua** | 8d | 2015-11-10 | 2015-11-19 | 40 | 17d | 0d |  | 96h | 5,070 |
| 45 | 1.2.3.2.1 | Revisar información | 2d | 2015-11-10 | 2015-11-11 |  | 18d | 0d | E.CH; V.C | 32h | 1,130 |
| 46 | 1.2.3.2.2 | Elaborar planos y documentos del Sistema para el mantenimiento y procesamiento del agua | 5d | 2015-11-12 | 2015-11-18 | 45FS-1d | 17d | 0d | E.CH | 40h | 2,600 |
| 47 | 1.2.3.2.3 | Revisar planos y documentos del Sistema para el mantenimiento y procesamiento del agua | 3d | 2015-11-17 | 2015-11-19 | 46FS-2d | 17d |  | V.C | 24h | 1,340 |
| 48 | 1.2.3.3 | **Planta calmilk** | 5d | 2015-11-20 | 2015-11-26 | 44 | 17d | 0d |  |  | 2,800 |
| 49 | 1.2.3.3.1 | Revisar información | 2d | 2015-11-20 | 2015-11-23 |  | 17d | 0d |  |  | 600 |
| 50 | 1.2.3.3.2 | Elaborar planos y documentos para la Planta Calmilk | 3d | 2015-11-24 | 2015-11-26 | 49 | 17d | 0d |  |  | 1,700 |
| 51 | 1.2.3.3.3 | Revisar y aprobar planos y documentos para la Planta Calmilk | 1d | 2015-11-25 | 2015-11-25 | 50FS-2d | 18d |  |  |  | 500 |

| ID | WBS | Task | Duration | Start | Finish | Predecessors | Total slack | Free slack | Resources | Work | Cost |
| --- | --- | --- | --- | --- | --- | --- | --- | --- | --- | --- | --- |
| 52 | 1.2.3.4 | **Manejo de reactivos** | 7d | 2015-11-27 | 2015-12-07 | 48 | 17d |  |  |  | 3,690 |
| 53 | 1.2.3.4.1 | Revisar información | 2d | 2015-11-27 | 2015-11-30 |  | 17d | 0d |  |  | 990 |
| 54 | 1.2.3.4.2 | Elaborar planos y documentos para el manejo de reactivos | 4d | 2015-12-01 | 2015-12-04 | 53 | 17d | 0d |  |  | 1,700 |
| 55 | 1.2.3.4.3 | Revisar planos y documentos para el manejo de reactivos | 2d | 2015-12-04 | 2015-12-07 | 54FS-1d | 17d |  |  |  | 1,000 |
| 56 | 1.2.4 | **Civil** | 16d | 2015-12-08 | 2015-12-29 | 39 | 17d | 0d |  | 128h | 16,910 |
| 57 | 1.2.4.1 | **Estudio mecanico de suelos** | 9d | 2015-12-08 | 2015-12-18 |  | 17d | 0d |  | 16h | 10,560 |
| 58 | 1.2.4.1.1 | Realizar toma de muestras de suelo | 3d | 2015-12-08 | 2015-12-10 |  | 17d | 0d | Emp.EDTS [0.1%] |  | 7,400 |
| 59 | 1.2.4.1.2 | Realizar pruebas mecánicas y análisis químico | 4d | 2015-12-11 | 2015-12-16 | 58 | 17d | 0d |  |  | 2,000 |
| 60 | 1.2.4.1.3 | Revisión y aprobación de expediente técnico | 2d | 2015-12-17 | 2015-12-18 | 59 | 17d |  | M.Q | 16h | 1,160 |
| 61 | 1.2.4.2 | **Cimentación** | 9d | 2015-12-17 | 2015-12-29 | 57FS-2d | 17d |  |  | 112h | 6,350 |
| 62 | 1.2.4.2.1 | Revisar información | 4d | 2015-12-17 | 2015-12-22 |  | 17d | 0d | E.S; F.K | 64h | 2,700 |
| 63 | 1.2.4.2.2 | Elaborar planos y documentos de cimentación | 4d | 2015-12-23 | 2015-12-28 | 62 | 17d | 0d | E.S | 32h | 2,690 |
| 64 | 1.2.4.2.3 | Revisar y aprobar planos y documentos de cimentación | 2d | 2015-12-28 | 2015-12-29 | 63FS-1d | 17d |  | F.K | 16h | 960 |
| 65 | 1.2.5 | **Estructura** | 19d | 2015-12-30 | 2016-01-25 | 56 | 16d | 0d |  | 216h | 16,689 |
| 66 | 1.2.5.1 | **Nave de almacen** | 7d | 2015-12-30 | 2016-01-07 |  | 17d | 0d |  | 72h | 5,309 |
| 67 | 1.2.5.1.1 | Revisar información | 2d | 2015-12-30 | 2015-12-31 |  | 17d | 0d | D.F; M.Q | 32h | 1,349 |
| 68 | 1.2.5.1.2 | Elaborar planos y documentos de Nave de almacén | 3d | 2016-01-01 | 2016-01-05 | 67 | 17d | 0d | D.F | 24h | 2,400 |
| 69 | 1.2.5.1.3 | Revisar y aprobar planos y documentos Nave de almacén | 2d | 2016-01-06 | 2016-01-07 | 68 | 17d |  | M.Q | 16h | 1,560 |
| 70 | 1.2.5.2 | **Plataforma** | 7d | 2016-01-07 | 2016-01-15 | 66FS-1d | 17d | 1d |  | 72h | 5,480 |
| 71 | 1.2.5.2.1 | Revisar información | 3d | 2016-01-07 | 2016-01-11 |  | 17d | 0d | D.F; M.Q | 32h | 1,320 |
| 72 | 1.2.5.2.2 | Elaborar planos y documentos de plataforma | 3d | 2016-01-12 | 2016-01-14 | 71 | 17d | 0d | D.F | 24h | 2,600 |
| 73 | 1.2.5.2.3 | Revisar y aprobar planos y documentos de plataforma | 2d | 2016-01-14 | 2016-01-15 | 72FS-1d | 17d |  | M.Q | 16h | 1,560 |
| 74 | 1.2.5.3 | **Accesos** | 7d | 2016-01-15 | 2016-01-25 | 70FS-2d | 16d |  |  | 72h | 5,900 |
| 75 | 1.2.5.3.1 | Revisar información | 3d | 2016-01-15 | 2016-01-19 |  | 16d | 0d | D.F; M.Q | 32h | 1,560 |
| 76 | 1.2.5.3.2 | Elaborar planos y documentos accesos | 3d | 2016-01-20 | 2016-01-22 | 75 | 16d | 0d | D.F | 24h | 3,000 |
| 77 | 1.2.5.3.3 | Revisar y aprobar planos y documentos accesos | 2d | 2016-01-22 | 2016-01-25 | 76FS-1d | 16d |  | M.Q | 16h | 1,340 |

| ID | WBS | Task | Duration | Start | Finish | Predecessors | Total slack | Free slack | Resources | Work | Cost |
| --- | --- | --- | --- | --- | --- | --- | --- | --- | --- | --- | --- |
| 78 | 1.2.6 | **Sanitaria** | 9d | 2016-01-26 | 2016-02-05 | 65 | 14d | 0d |  | 128h | 11,800 |
| 79 | 1.2.6.1 | **Distribución de agua** | 7d | 2016-01-26 | 2016-02-03 |  | 16d | 3d |  | 64h | 4,990 |
| 80 | 1.2.6.1.1 | Revisar información | 2d | 2016-01-26 | 2016-01-28 |  | 16d | 0d | D.S; F.K | 32h | 1,410 |
| 81 | 1.2.6.1.2 | Elaborar planos y documentos de distribución de agua | 3d | 2016-01-29 | 2016-02-02 | 80 | 16d | 0d | D.F | 24h | 2,600 |
| 82 | 1.2.6.1.3 | Revisar y aprobar planos y documentos de distribución de agua | 1d | 2016-02-03 | 2016-02-03 | 81FS-1d | 16d |  | F.K | 8h | 980 |
| 83 | 1.2.6.2 | **Línea de desague** | 6d | 2016-01-29 | 2016-02-05 | 79SS | 14d |  |  | 64h | 6,810 |
| 84 | 1.2.6.2.1 | Revisar información | 2d | 2016-01-29 | 2016-02-02 |  | 14d | 0d | D.S; F.K | 32h | 2,260 |
| 85 | 1.2.6.2.2 | Elaborar planos y documentos de línea de desague | 3d | 2016-02-03 | 2016-02-05 | 84 | 14d | 0d | D.F | 24h | 3,600 |
| 86 | 1.2.6.2.3 | Revisar y aprobar planos y documentos de línea de desague | 1d | 2016-02-05 | 2016-02-05 | 85FS-1d | 14d |  | F.K | 8h | 950 |
| 87 | 1.2.7 | **Eléctrica** | 28d | 2016-02-08 | 2016-03-16 | 78 | 9d | 0d |  | 264h | 15,750 |
| 88 | 1.2.7.1 | **Sistema de puesta a tierra** | 11d | 2016-02-08 | 2016-02-22 |  | 26d | 4d |  | 96h | 5,800 |
| 89 | 1.2.7.1.1 | Revisar información | 2d | 2016-02-08 | 2016-02-09 |  | 26d | 0d | D.R; P.T | 32h | 1,360 |
| 90 | 1.2.7.1.2 | Elaborar planos y documentos de Sistema de puesta a tierra | 5d | 2016-02-10 | 2016-02-16 | 89 | 26d | 0d | D.R | 40h | 2,800 |
| 91 | 1.2.7.1.3 | Revisar y aprobar planos y documentos de Sistema de puesta a tierra | 3d | 2016-02-18 | 2016-02-22 | 90FS-1d | 26d |  | P.T | 24h | 1,640 |
| 92 | 1.2.7.2 | **Sistema de iluminación** | 24d | 2016-02-12 | 2016-03-16 | 88SS | 9d | 0d |  | 88h | 5,030 |
| 93 | 1.2.7.2.1 | Revisar información | 4d | 2016-02-12 | 2016-02-26 |  | 10d | 0d | D.R; P.T | 32h | 1,320 |
| 94 | 1.2.7.2.2 | Elaborar planos y documentos de Sistema de iluminación | 4d | 2016-03-09 | 2016-03-14 | 93 | 9d | 0d | D.R | 32h | 2,200 |
| 95 | 1.2.7.2.3 | Revisar y aprobar planos y documentos de Sistema de iluminación | 3d | 2016-03-14 | 2016-03-16 | 94FS-1d | 9d |  | P.T | 24h | 1,510 |
| 96 | 1.2.7.3 | **Distribución de energía** | 11d | 2016-02-16 | 2016-03-01 | 92SS+2d | 20d |  |  | 80h | 4,920 |
| 97 | 1.2.7.3.1 | Revisar información | 3d | 2016-02-16 | 2016-02-19 |  | 20d | 0d | D.R; P.T | 24h | 1,330 |
| 98 | 1.2.7.3.2 | Elaborar planos y documentos de Distribución de energía | 4d | 2016-02-22 | 2016-02-29 | 97 | 20d | 0d | D.R | 32h | 2,300 |
| 99 | 1.2.7.3.3 | Revisar y aprobar planos y documentos de Distribución de energía | 3d | 2016-02-26 | 2016-03-01 | 98FS-2d | 20d |  | P.T | 24h | 1,290 |
| 100 | 1.2.8 | **Instrumentación y control** | 23d | 2016-03-17 | 2016-04-18 | 87 | 6d |  |  | 232h | 18,330 |
| 101 | 1.2.8.1 | **Filosofia de control** | 6d | 2016-03-17 | 2016-03-24 |  | 9d | 3d |  | 72h | 5,110 |
| 102 | 1.2.8.1.1 | Revisar información | 2d | 2016-03-17 | 2016-03-18 |  | 9d | 1d | J.V; A.L | 32h | 1,560 |
| 103 | 1.2.8.1.2 | Elaborar documento de filosofía de control | 3d | 2016-03-21 | 2016-03-23 | 102FS-1d | 9d | 0d | J.V | 24h | 2,400 |
| 104 | 1.2.8.1.3 | Revisar y aprobar documento de filosofía de control | 2d | 2016-03-23 | 2016-03-24 | 103FS-1d | 9d |  | A.L | 16h | 1,150 |

| ID | WBS | Task | Type | Duration | Start | Finish | Predecessors | Total slack | Free slack | Resources | Work | Cost |
| --- | --- | --- | --- | --- | --- | --- | --- | --- | --- | --- | --- | --- |
| 105 | 1.2.8.2 | **Lazo de control** |  | 7d | 2016-03-28 | 2016-04-05 | 101FS-2d | 6d | 0d |  | 80h | 6,770 |
| 106 | 1.2.8.2.1 | Revisar información |  | 4d | 2016-03-28 | 2016-03-31 |  | 6d | 0d | J.V; A.L | 48h | 1,690 |
| 107 | 1.2.8.2.2 | Elaborar planos de Lazos de control |  | 3d | 2016-04-01 | 2016-04-05 | 106 | 6d | 0d | J.V | 24h | 3,300 |
| 108 | 1.2.8.2.3 | Revisar y aprobar planos de Lazos de control |  | 1d | 2016-04-05 | 2016-04-05 | 107FS-1d | 6d |  | A.L | 8h | 1,780 |
| 109 | 1.2.8.3 | **Disposición de equipos e instrumentos** |  | 7d | 2016-04-08 | 2016-04-18 | 105FS+2d, 65FS-2d | 6d | 0d |  | 80h | 6,450 |
| 110 | 1.2.8.3.1 | Revisar información |  | 3d | 2016-04-08 | 2016-04-12 |  | 6d | 0d | J.V; A.L | 48h | 2,440 |
| 111 | 1.2.8.3.2 | Elaborar planos de Disposición de equipos |  | 2d | 2016-04-13 | 2016-04-14 | 110 | 6d | 0d | J.V | 16h | 3,000 |
| 112 | 1.2.8.3.3 | Revisar y aprobar planos de Disposición de equipos |  | 2d | 2016-04-15 | 2016-04-18 | 111 | 6d |  | A.L | 16h | 1,010 |
| 113 | 1.2.8.4 | Fin de la Ingeniería de detalle | milestone | 0d | 2016-04-18 | 2016-04-18 | 109 | 6d |  |  |  |  |
| 114 | 1.3 | **Procura y adquisiciones** |  | 7d | 2015-09-25 | 2015-10-05 | 19SS+13d | 0d |  |  |  | 22,600 |
| 115 | 1.3.1 | Licitaciones |  | 3d | 2015-09-25 | 2015-09-29 |  | 0d |  |  |  | 2,600 |
| 116 | 1.3.2 | Compra de materiales y transporte |  | 4d | 2015-09-30 | 2015-10-05 | 115 | 0d |  |  |  | 20,000 |
| 117 | 1.3.3 | Final de Procura y adquisiciones | milestone | 0d | 2015-10-05 | 2015-10-05 | 116 | 0d |  |  |  |  |
| 118 | 1.4 | **Fabricación** |  | 55d | 2015-10-06 | 2015-12-21 | 114, 19SS+6d | 0d |  |  |  | 14,000 |
| 119 | 1.4.1 | Equipos |  | 30d | 2015-10-06 | 2015-11-16 |  | 0d |  |  |  |  |
| 120 | 1.4.2 | Estructuras |  | 25d | 2015-11-17 | 2015-12-21 | 119 | 0d |  |  |  | 14,000 |
| 121 | 1.4.3 | Final de Fabricación | milestone | 0d | 2015-12-21 | 2015-12-21 | 120 | 0d |  |  |  |  |
| 122 | 1.5 | **Construccion y montaje** |  | 58d | 2015-12-18 | 2016-03-08 | 118FS-2d | 0d |  |  |  | 24,000 |
| 123 | 1.5.1 | Sistema de impulsión |  | 3d | 2015-12-18 | 2015-12-22 |  | 0d |  |  |  | 5,000 |
| 124 | 1.5.2 | Montaje de equipos |  | 25d | 2015-12-23 | 2016-01-26 | 123 | 0d |  |  |  | 16,000 |
| 125 | 1.5.3 | Montaje de estructuras y mas |  | 30d | 2016-01-27 | 2016-03-08 | 124 | 0d |  |  |  | 3,000 |
| 126 | 1.5.4 | Fin de construcción y montaje | milestone | 0d | 2016-03-08 | 2016-03-08 | 125 | 0d |  |  |  |  |
| 127 | 1.6 | **Puesta en marcha** |  | 5d | 2016-04-20 | 2016-04-26 | 126FS+30d | 0d |  |  |  | 6,800 |
| 128 | 1.6.1 | Procesamiento y mantenimiento |  | 3d | 2016-04-20 | 2016-04-22 |  | 0d |  |  |  | 4,000 |
| 129 | 1.6.2 | Puesta en marcha |  | 1d | 2016-04-25 | 2016-04-25 | 128 | 0d |  |  |  |  |
| 130 | 1.6.3 | Acta de cierre |  | 1d | 2016-04-26 | 2016-04-26 | 129 | 0d |  |  |  | 2,800 |
| 131 | 1.6.4 | Final de la Puesta en marcha | milestone | 0d | 2016-04-26 | 2016-04-26 | 130 | 0d |  |  |  |  |
