# Instalación de Voz IP y de datos para una residencia

Schedule from MS Project, 2013-01-03 to 2014-07-10, costs in $, A marks actual dates.
Instituto de comunicaciones

## Calendars

- Standard: Mon-Fri 08:00-12:00, 13:00-17:00; Sat-Sun off.

## Resources

| Resource | Rate |
| --- | --- |
| Analista de la arquitectura | 26 |
| Director del Proyecto | 30 |
| Administrador de la red | 40 |
| Arquitecto de red | 32 |
| Técnico senior de telecomunicaciones | 26 |
| Comité presupuestario | 325 |
| Sección de finanzas | 20 |
| Construcción del cronograma |  |
| Servicio de estudiantes |  |
| Analisis de la red de Software | 26 |
| Técnico de red | 20 |
| Funcionario administrativo | 20 |
| Compañía de Cableado |  |

## Schedule

| ID | WBS | Task | Type | Duration | Start | Finish | Predecessors | Complete | Remaining | Baseline start | Baseline finish | Baseline duration | Total slack | Constraint | Resources | Work | Actual work | Cost | Baseline cost | Actual cost | Text27 | Text29 |
| --- | --- | --- | --- | --- | --- | --- | --- | --- | --- | --- | --- | --- | --- | --- | --- | --- | --- | --- | --- | --- | --- | --- |
| 1 | 1 | **Trabajo preliminar y estudiuo de factibilidad para su aprobación** |  | 28.5d | 2013-10-31 A | 2013-12-10 |  | 99% | 0d | 2000-10-31 | 2000-12-13 | 32d | 0d |  |  | 192h | 192h | 6,144 | 7,168 | 6,144 | Eric Marois | AV |
| 2 | 1.1 | Definir el alcance de alto nivel |  | 3.5d | 2013-10-31 A | 2013-11-05 A |  | 100% |  | 2000-10-31 | 2000-11-02 | 3d |  |  | Director del Proyecto; Administrador de la red; Arquitecto de red; Técnico senior de telecomunicaciones | 112h | 112h | 3,584 | 3,072 | 3,584 | Eric Marois | AV |
| 3 | 1.2 | Estimar requisitos de presupuesto |  | 2.5d | 2013-11-03 A | 2013-11-06 A | 2 | 100% |  | 2000-11-03 | 2000-11-08 | 4d |  |  | Director del Proyecto; Administrador de la red; Arquitecto de red; Técnico senior de telecomunicaciones | 80h | 80h | 2,560 | 4,096 | 2,560 | Eric Marois | AV |
| 4 | 1.3 | Presupuesto listo para su aprobación | milestone | 0d | 2013-11-07 A | 2013-11-07 A | 3 | 100% |  | 2000-11-08 | 2000-11-08 | 0d |  |  |  |  |  |  |  |  | Eric Marois | AV |
| 5 | 1.4 | Revisar y aprobar el presupuesto del proyecto |  | 3.5d | 2013-11-07 A | 2013-11-12 A | 4 | 100% |  | 2000-11-08 | 2000-11-15 | 5d |  |  | Comité presupuestario |  |  |  |  |  | Eric Marois | AV |
| 6 | 1.5 | Presupuesto de TI programado y listo para su orden de compra | milestone | 0d | 2013-12-10 | 2013-12-10 | 5FS+20d |  |  | 2000-12-13 | 2000-12-13 | 0d | 0d |  |  |  |  |  |  |  | Eric Marois | AV |
| 7 | 2 | **Gestión del proyecto** |  | 254.5d | 2013-01-03 A | 2013-12-25 |  | 4% | 245.07d | 2000-10-31 | 2001-07-31 | 186d | 141.5d |  |  | 216h |  | 6,880 | 6,880 |  | Eric Marois | AV |
| 8 | 2.1 | Definir el equipo del proyecto |  | 4d | 2013-12-10 | 2013-12-16 | 6 |  |  | 2000-12-14 | 2000-12-19 | 4d | 0d |  | Director del Proyecto; Administrador de la red | 64h |  | 2,240 | 2,240 |  | Eric Marois | AV |
| 9 | 2.2 | **Estado MTg** |  | 246d | 2013-01-03 A | 2013-12-12 |  | 6% | 230.62d | 2000-10-31 | 2001-07-31 | 186d | 150d |  |  |  |  |  |  |  | Eric Marois | AV |
| 10 | 2.2.1 | Estado MTg 1 |  | 0.5d | 2013-10-31 A | 2013-10-31 A |  | 100% |  | 2000-10-31 | 2000-10-31 | 1d |  | start no earlier than 2000-10-31 |  |  |  |  |  |  | Eric Marois | AV |
| 11 | 2.2.2 | Estado MTg 2 |  | 0.5d | 2013-11-21 A | 2013-11-21 A |  | 100% |  | 2000-11-21 | 2000-11-21 | 1d |  | start no earlier than 2000-11-21 |  |  |  |  |  |  | Eric Marois | AV |
| 12 | 2.2.3 | Estado MTg 3 |  | 1d | 2013-12-12 | 2013-12-12 |  |  |  | 2000-12-12 | 2000-12-12 | 1d | 150d | start no earlier than 2013-12-12 |  |  |  |  |  |  | Eric Marois | AV |
| 13 | 2.2.4 | Estado MTg 4 |  | 1d | 2013-01-03 | 2013-01-03 |  |  |  | 2001-01-03 | 2001-01-03 | 1d | 395d | start no earlier than 2013-01-03 |  |  |  |  |  |  | Eric Marois | AV |
| 14 | 2.2.5 | Estado MTg 5 |  | 1d | 2013-01-23 | 2013-01-23 |  |  |  | 2001-01-23 | 2001-01-23 | 1d | 381d | start no earlier than 2013-01-23 |  |  |  |  |  |  | Eric Marois | AV |
| 15 | 2.2.6 | Estado MTg 6 |  | 1d | 2013-02-13 | 2013-02-13 |  |  |  | 2001-02-13 | 2001-02-13 | 1d | 366d | start no earlier than 2013-02-13 |  |  |  |  |  |  | Eric Marois | AV |
| 16 | 2.2.7 | Estado MTg 7 |  | 1d | 2013-03-06 | 2013-03-06 |  |  |  | 2001-03-06 | 2001-03-06 | 1d | 351d | start no earlier than 2013-03-06 |  |  |  |  |  |  | Eric Marois | AV |
| 17 | 2.2.8 | Estado MTg 8 |  | 1d | 2013-03-27 | 2013-03-27 |  |  |  | 2001-03-27 | 2001-03-27 | 1d | 336d | start no earlier than 2013-03-27 |  |  |  |  |  |  | Eric Marois | AV |
| 18 | 2.2.9 | Estado MTg 9 |  | 1d | 2013-04-17 | 2013-04-17 |  |  |  | 2001-04-17 | 2001-04-17 | 1d | 321d | start no earlier than 2013-04-17 |  |  |  |  |  |  | Eric Marois | AV |
| 19 | 2.2.10 | Estado MTg 10 |  | 1d | 2013-05-08 | 2013-05-08 |  |  |  | 2001-05-08 | 2001-05-08 | 1d | 306d | start no earlier than 2013-05-08 |  |  |  |  |  |  | Eric Marois | AV |
| 20 | 2.2.11 | Estado MTg 11 |  | 1d | 2013-05-29 | 2013-05-29 |  |  |  | 2001-05-29 | 2001-05-29 | 1d | 291d | start no earlier than 2013-05-29 |  |  |  |  |  |  | Eric Marois | AV |
| 21 | 2.2.12 | Estado MTg 12 |  | 1d | 2013-06-19 | 2013-06-19 |  |  |  | 2001-06-19 | 2001-06-19 | 1d | 276d | start no earlier than 2013-06-19 |  |  |  |  |  |  | Eric Marois | AV |
| 22 | 2.2.13 | Estado MTg 13 |  | 1d | 2013-07-10 | 2013-07-10 |  |  |  | 2001-07-10 | 2001-07-10 | 1d | 261d | start no earlier than 2013-07-10 |  |  |  |  |  |  | Eric Marois | AV |
| 23 | 2.2.14 | Estado MTg 14 |  | 1d | 2013-07-31 | 2013-07-31 |  |  |  | 2001-07-31 | 2001-07-31 | 1d | 246d | start no earlier than 2013-07-31 |  |  |  |  |  |  | Eric Marois | AV |
| 24 | 2.2.15 | Estado MTg 15 |  | 1d | 2013-08-07 | 2013-08-07 |  |  |  | 2001-08-07 | 2001-08-07 | 1d? | 241d | start no earlier than 2013-08-07 |  |  |  |  |  |  | Eric Marois | AV |
| 25 | 2.2.16 | Estado MTg 16 |  | 1d | 2013-08-14 | 2013-08-14 |  |  |  | 2001-08-14 | 2001-08-14 | 1d? | 236d | start no earlier than 2013-08-14 |  |  |  |  |  |  | Eric Marois | AV |
| 26 | 2.2.17 | Estado MTg 17 |  | 1d | 2013-08-20 | 2013-08-20 |  |  |  | 2001-08-20 | 2001-08-20 | 1d? | 232d | start no earlier than 2013-08-20 |  |  |  |  |  |  | Eric Marois | AV |

Notes:
- 6: It take about 20 working days to process all the financial aspect of the project after budget committe approval, before somebody can start spending some money. Before Budget code are available special authorization are required to spend any $. / ESTO TOMA 20 dias de trabajo para proceder todos los paspectos de financiamiento del proyecto despues de la aprobación del comité, abtes alguien puede comenzar a gastar dinero. Antes que el codigo de presupuesto tiene una autorizacion especial es requerida para gastar nada de dinero.
- 8: Project is mainly wiring, purchasing of equipment, installation and a lot of coordination with the construction site. / el proyecto es principalmente cableado, compra de equipo, instalacion y mucha coordinacion con el lugar de construccion

| ID | WBS | Task | Type | Duration | Start | Finish | Predecessors | Baseline start | Baseline finish | Baseline duration | Total slack | Constraint | Resources | Work | Cost | Baseline cost | Text27 | Text29 |
| --- | --- | --- | --- | --- | --- | --- | --- | --- | --- | --- | --- | --- | --- | --- | --- | --- | --- | --- |
| 27 | 2.3 | **Administración** |  | 7d | 2013-12-16 | 2013-12-25 |  | 2000-12-20 | 2001-01-08 | 7d | 0d |  |  | 152h | 4,640 | 4,640 | Eric Marois | AV |
| 28 | 2.3.1 | Definir el alcande detallado del proyecto |  | 5d | 2013-12-16 | 2013-12-23 | 8 | 2000-12-20 | 2001-01-04 | 5d | 0d |  | Técnico senior de telecomunicaciones; Arquitecto de red; Director del Proyecto | 120h | 3,520 | 3,520 | Eric Marois | AV |
| 29 | 2.3.2 | Asegurar los principales recursos |  | 2d | 2013-12-23 | 2013-12-25 | 28 | 2001-01-05 | 2001-01-08 | 2d | 0d |  | Administrador de la red; Director del Proyecto | 32h | 1,120 | 1,120 | Eric Marois | AV |
| 30 | 2.3.3 | Equipo del proyecto reunido | milestone | 0d | 2013-12-25 | 2013-12-25 | 29 | 2001-01-08 | 2001-01-08 | 0d | 0d |  |  |  |  |  | Eric Marois | AV |
| 31 | 2.4 | **Marcador para el cronograma de construccion de la residencia** |  | 62d | 2013-03-01 | 2013-05-28 |  | 2001-03-01 | 2001-05-28 | 60d | 233.5d |  |  |  |  |  | Eric Marois | AV |
| 32 | 2.4.1 | Ambiente listo para el equipo de TI | milestone | 0d | 2013-03-01 | 2013-03-01 |  | 2001-03-01 | 2001-03-01 | 0d | 277d | start no earlier than 2013-03-01 | Director del Proyecto; Construcción del cronograma |  |  |  | Eric Marois | AV |
| 33 | 2.4.2 | Lista de estudiantes y asignación de espacios recibida | milestone | 0d | 2013-05-28 | 2013-05-28 |  | 2001-05-28 | 2001-05-28 | 0d | 233.5d | start no earlier than 2013-05-28 | Servicio de estudiantes |  |  |  | Eric Marois | AV |
| 34 | 3 | **Revisión de la instalación de VoIP y de datos para el edificio 1** |  | 11.5d | 2013-12-25 | 2014-01-09 |  | 2001-01-09 | 2001-01-24 | 11.5d | 0d |  |  | 252h | 7,224 | 7,224 | Eric Marois | AV |
| 35 | 3.1 | Revisar el entorno del hadware |  | 4d | 2013-12-25 | 2013-12-31 | 30 | 2001-01-09 | 2001-01-12 | 4d | 2d |  | Técnico senior de telecomunicaciones; Arquitecto de red | 64h | 1,856 | 1,856 | Eric Marois | AV |
| 36 | 3.2 | Revisar el entorno del Software |  | 2d | 2013-12-31 | 2014-01-02 | 30 | 2001-01-15 | 2001-01-16 | 2d | 0d |  | Técnico senior de telecomunicaciones; Analisis de la red de Software | 32h | 832 | 832 | Eric Marois | AV |
| 37 | 3.3 | Revisar el ambiente de soporte |  | 4d | 2014-01-02 | 2014-01-08 | 35, 36 | 2001-01-17 | 2001-01-22 | 4d | 0d |  | Técnico senior de telecomunicaciones; Arquitecto de red; Analisis de la red de Software | 96h | 2,688 | 2,688 | Eric Marois | AV |
| 38 | 3.4 | Revisión de VoIP en el Edificio I completado |  | 1.5d | 2014-01-08 | 2014-01-09 | 37 | 2001-01-23 | 2001-01-24 | 1.5d | 0d |  | Director del Proyecto; Administrador de la red; Arquitecto de red; Técnico senior de telecomunicaciones; Analisis de la red de Software | 60h | 1,848 | 1,848 | Eric Marois | AV |
| 39 | 4 | Finalizar y documentar el sistema de requisitos |  | 5d | 2014-01-10 | 2014-01-16 | 38 | 2001-01-24 | 2001-01-31 | 5d | 0d |  | Administrador de la red; Arquitecto de red | 80h | 2,880 | 2,880 | Eric Marois | AV |
| 40 | 5 | Análisis completado | milestone | 0d | 2014-01-16 | 2014-01-16 | 39 | 2001-01-31 | 2001-01-31 | 0d | 0d |  |  |  |  |  | Eric Marois | AV |
| 41 | 6 | **Diseño para el edificio II** |  | 10d | 2014-01-17 | 2014-01-30 |  | 2001-01-31 | 2001-02-14 | 10d? | 0d |  |  | 248h | 7,168 | 7,168 | Eric Marois | AV |
| 42 | 6.1 | Diseñar el servicio telefonico (Elevador/emergencia) |  | 5d | 2014-01-17 | 2014-01-23 | 40 | 2001-01-31 | 2001-02-07 | 5d | 2d |  | Técnico senior de telecomunicaciones | 40h | 1,040 | 1,040 | Eric Marois | AV |
| 43 | 6.2 | Diseñar la infraestructura de red |  | 3d | 2014-01-23 | 2014-01-27 | 40 | 2001-02-06 | 2001-02-09 | 3d | 0d |  | Arquitecto de red; Analisis de la red de Software | 48h | 1,392 | 1,392 | Eric Marois | AV |
| 44 | 6.3 | Definir requisitos de diseño de cableado |  | 4d | 2014-01-17 | 2014-01-22 | 40 | 2001-01-31 | 2001-02-06 | 4d | 3d |  | Arquitecto de red; Técnico de red | 64h | 1,664 | 1,664 | Eric Marois | AV |
| 45 | 6.4 | Identificar las consecuencias de los actuales sistemas de voz |  | 2d | 2014-01-28 | 2014-01-29 | 42, 43, 44 | 2001-02-09 | 2001-02-13 | 2d | 0d |  | Director del Proyecto; Administrador de la red; Arquitecto de red; Técnico senior de telecomunicaciones | 64h | 2,048 | 2,048 | Eric Marois | AV |
| 46 | 6.5 | Diseñar el RPF para el edificio II |  | 1d | 2014-01-30 | 2014-01-30 | 45 | 2001-02-13 | 2001-02-14 | 1d? | 0d |  | Director del Proyecto; Administrador de la red; Arquitecto de red; Técnico senior de telecomunicaciones | 32h | 1,024 | 1,024 | Eric Marois | AV |
| 47 | 6.6 | Requisitos y especificaciones listo | milestone | 0d | 2014-01-30 | 2014-01-30 | 46 | 2001-02-14 | 2001-02-14 | 0d | 0d |  |  |  |  |  | Eric Marois | AV |
| 48 | 7 | **Compra de equipos** |  | 37d | 2014-01-31 | 2014-03-24 |  | 2001-02-14 | 2001-04-05 | 37d | 0d |  |  | 40h | 800 | 800 | Eric Marois | AV |
| 49 | 7.1 | Pedir el equipo de red |  | 2d | 2014-01-31 | 2014-02-03 | 47 | 2001-02-14 | 2001-02-16 | 2d | 0d |  | Funcionario administrativo | 16h | 320 | 320 | Eric Marois | AV |
| 50 | 7.2 | Pedir el equipo de soporte |  | 3d | 2014-02-04 | 2014-02-06 | 46 | 2001-02-16 | 2001-02-21 | 3d | 32d |  | Funcionario administrativo | 24h | 480 | 480 | Eric Marois | AV |
| 51 | 7.3 | Equipo recibido | milestone | 0d | 2014-03-24 | 2014-03-24 | 49FS+35d, 50 | 2001-04-05 | 2001-04-05 | 0d | 0d |  | Funcionario administrativo; Técnico de red |  |  |  | Eric Marois | AV |

Notes:
- 31: Since this project is part of a much larger project, it is important to caries over a few marker. We do not have total electronics integration for all the schedules involved in this projects. So having markers makes it easy for me to update my schedule each time the construction schedule change. I keep control over my schedule by having only well define entry point.
- 37: Negociate the budget authority for the IT portion. / Negicoar el presupuesto autorizadoo para la parte de TI
- 50: Auxilairy equipment: / Cabinet, UPS, track, / equipo auxiliar: / Cabinet, UPS, pista (track)
- 51: Lag, it takes 4 to 6 weeks to get the equipments delivered / retraso, toma entre 4 a 6 semanas obtener lo equipos.

| ID | WBS | Task | Type | Duration | Start | Finish | Predecessors | Baseline start | Baseline finish | Baseline duration | Total slack | Free slack | Resources | Work | Cost | Baseline cost | Text27 | Text29 |
| --- | --- | --- | --- | --- | --- | --- | --- | --- | --- | --- | --- | --- | --- | --- | --- | --- | --- | --- |
| 52 | 8 | **Implementar infraestructura de cableado** |  | 61d | 2014-01-31 | 2014-04-25 |  | 2001-02-14 | 2001-05-11 | 61d | 29.5d |  |  | 400h | 4,800 | 4,800 | Eric Marois | AV |
| 53 | 8.1 | Realizar las propuestas de solicitud para el cableado de los teléfonos y la red |  | 5d | 2014-01-31 | 2014-02-06 | 46 | 2001-02-14 | 2001-02-21 | 5d | 29.5d | 0d | Director del Proyecto | 40h | 1,200 | 1,200 | Eric Marois | AV |
| 54 | 8.2 | Evaluar las propuestas |  | 5d | 2014-03-10 | 2014-03-14 | 53FS+21d | 2001-03-22 | 2001-03-29 | 5d | 29.5d | 0d | Director del Proyecto; Administrador de la red; Técnico de red | 120h | 3,600 | 3,600 | Eric Marois | AV |
| 55 | 8.3 | **Instalación del cableado** |  | 30d | 2014-03-17 | 2014-04-25 |  | 2001-03-28 | 2001-05-09 | 30d | 29.5d |  |  | 240h |  |  | Eric Marois | AV |
| 56 | 8.3.1 | Instalar el cableado en el primer piso |  | 9d | 2014-03-17 | 2014-03-27 | 54 | 2001-03-28 | 2001-04-06 | 9d | 29.5d | 0d | Compañía de Cableado | 72h |  |  | Eric Marois | AV |
| 57 | 8.3.2 | Instalar el cableado en el segundo piso |  | 9d | 2014-03-28 | 2014-04-09 | 56 | 2001-04-09 | 2001-04-23 | 9d | 29.5d | 0d | Compañía de Cableado | 72h |  |  | Eric Marois | AV |
| 58 | 8.3.3 | Instalar el cableado en el tercer piso |  | 9d | 2014-04-10 | 2014-04-22 | 57 | 2001-04-24 | 2001-05-04 | 9d | 29.5d | 0d | Compañía de Cableado | 72h |  |  | Eric Marois | AV |
| 59 | 8.3.4 | Realizar la interfase de cableado entre el piso y otros edificios |  | 3d | 2014-04-23 | 2014-04-25 | 58 | 2001-05-07 | 2001-05-09 | 3d | 29.5d | 0d | Compañía de Cableado | 24h |  |  | Eric Marois | AV |
| 60 | 8.4 | Cableado instalado | milestone | 0d | 2014-04-25 | 2014-04-25 | 59 |  |  |  | 29.5d |  |  |  |  |  | Eric Marois | AV |
| 61 | 9 | **Configuración de ambiente de datos (8)** |  | 70.5d | 2014-03-25 | 2014-07-01 |  | 2001-04-05 | 2001-05-07 | 20.5d | 0d |  |  | 288h | 6,624 | 6,624 | Eric Marois | AV |
| 62 | 9.1 | Instalar UPS |  | 2d | 2014-06-27 | 2014-07-01 | 32, 51 | 2001-05-04 | 2001-05-07 | 2d | 4.5d |  | Técnico senior de telecomunicaciones; Técnico de red | 32h | 736 | 736 | Eric Marois | AV |
| 63 | 9.2 | Configurar el ambiente para el equipo de red |  | 4d | 2014-03-25 | 2014-03-28 | 32, 51 | 2001-04-05 | 2001-04-11 | 4d | 0d |  | Técnico senior de telecomunicaciones; Técnico de red | 64h | 1,472 | 1,472 | Eric Marois | AV |
| 64 | 9.3 | Instalar el equipo en el ambiente de red |  | 10d | 2014-03-31 | 2014-04-11 | 63 | 2001-04-11 | 2001-04-27 | 10d | 0d |  | Técnico senior de telecomunicaciones; Técnico de red | 160h | 3,680 | 3,680 | Eric Marois | AV |
| 65 | 9.4 | Prueba del ambiente del equipo de red |  | 2d | 2014-04-14 | 2014-04-15 | 64 | 2001-04-27 | 2001-05-01 | 2d | 0d |  | Técnico senior de telecomunicaciones; Técnico de red | 32h | 736 | 736 | Eric Marois | AV |
| 66 | 9.5 | Ambiente de datos listo | milestone | 0d | 2014-04-15 | 2014-04-15 | 65 | 2001-05-01 | 2001-05-01 | 0d | 0d |  |  |  |  |  | Eric Marois | AV |
| 67 | 10 | **Instalación del sistema de voz** |  | 52.5d | 2014-04-16 | 2014-06-27 |  | 2001-05-01 | 2001-08-07 | 67.5d | 0d |  |  | 420h | 10,920 | 10,920 | Eric Marois | AV |
| 68 | 10.1 | Programar interruptores de telefono |  | 2.5d | 2014-04-16 | 2014-04-18 | 66 | 2001-05-01 | 2001-05-03 | 2.5d | 0d |  | Técnico senior de telecomunicaciones | 20h | 520 | 520 | Eric Marois | AV |
| 69 | 10.2 | **Configuración de teléfonos y cuentas de correo de voz (350)** |  | 35d | 2014-04-18 | 2014-06-06 |  | 2001-05-28 | 2001-07-16 | 35d | 0d |  |  | 280h | 7,280 | 7,280 | Eric Marois | AV |
| 70 | 10.2.1 | Configurar telefonos de primer piso (110) |  | 11d | 2014-04-18 | 2014-05-05 | 68, 33 | 2001-05-28 | 2001-06-11 | 11d | 0d |  | Técnico senior de telecomunicaciones | 88h | 2,288 | 2,288 | Eric Marois | AV |
| 71 | 10.2.2 | Configurar telefonos de segundo piso (120) |  | 12d | 2014-05-05 | 2014-05-21 | 70 | 2001-06-12 | 2001-06-27 | 12d | 0d |  | Técnico senior de telecomunicaciones | 96h | 2,496 | 2,496 | Eric Marois | AV |
| 72 | 10.2.3 | Configurar telefonos de tercer piso (120) |  | 12d | 2014-05-21 | 2014-06-06 | 71 | 2001-06-28 | 2001-07-16 | 12d | 0d |  | Técnico senior de telecomunicaciones | 96h | 2,496 | 2,496 | Eric Marois | AV |
| 73 | 10.3 | **Instalación de aparatos telefónicos (350)** |  | 10d | 2014-06-06 | 2014-06-20 |  | 2001-07-17 | 2001-07-30 | 10d | 0d |  |  | 80h | 2,080 | 2,080 | Eric Marois | AV |
| 74 | 10.3.1 | Instalar teléfonos en primer piso |  | 3d | 2014-06-06 | 2014-06-11 | 72, 60 | 2001-07-17 | 2001-07-19 | 3d | 0d |  | Técnico senior de telecomunicaciones | 24h | 624 | 624 | Eric Marois | AV |
| 75 | 10.3.2 | Instalar teléfonos en segundo piso |  | 3.5d | 2014-06-11 | 2014-06-16 | 74 | 2001-07-20 | 2001-07-25 | 3.5d | 0d |  | Técnico senior de telecomunicaciones | 28h | 728 | 728 | Eric Marois | AV |
| 76 | 10.3.3 | Instalar teléfonos en tercer piso |  | 3.5d | 2014-06-17 | 2014-06-20 | 75 | 2001-07-25 | 2001-07-30 | 3.5d | 0d |  | Técnico senior de telecomunicaciones | 28h | 728 | 728 | Eric Marois | AV |
| 77 | 10.4 | Pruebas del sistema de telefono |  | 5d | 2014-06-20 | 2014-06-27 | 76 | 2001-07-31 | 2001-08-07 | 5d | 0d |  | Técnico senior de telecomunicaciones | 40h | 1,040 | 1,040 | Eric Marois | AV |
| 78 | 11 | Poner en servicio el sistema de red |  | 1.5d | 2014-06-27 | 2014-06-30 | 77 | 2001-08-08 | 2001-08-09 | 1.5d | 0d |  | Arquitecto de red; Administrador de la red | 24h | 864 | 864 | Eric Marois | AV |
| 79 | 12 | Red local de la residencia listo | milestone | 0d | 2014-06-30 | 2014-06-30 | 78 | 2001-08-09 | 2001-08-09 | 0d | 0d |  |  |  |  |  | Eric Marois | AV |

Notes:
- 54: Lag is du to the request for proposal process that requires us to wait at least 2 weeks for answer.

| ID | WBS | Task | Type | Duration | Start | Finish | Predecessors | Baseline start | Baseline finish | Baseline duration | Total slack | Resources | Work | Cost | Baseline cost | Text27 | Text29 |
| --- | --- | --- | --- | --- | --- | --- | --- | --- | --- | --- | --- | --- | --- | --- | --- | --- | --- |
| 80 | 13 | **Integración** |  | 5d | 2014-07-01 | 2014-07-07 |  | 2001-08-09 | 2001-08-16 | 5d | 0d |  | 40h | 1,040 | 1,040 | Eric Marois | AV |
| 81 | 13.1 | Configurar el servidor (Firewall) |  | 5d | 2014-07-01 | 2014-07-07 | 79 | 2001-08-09 | 2001-08-16 | 5d | 0d | Analisis de la red de Software | 40h | 1,040 | 1,040 | Eric Marois | AV |
| 82 | 13.2 | Configuración del servidor completado | milestone | 0d | 2014-07-07 | 2014-07-07 | 81 | 2001-08-16 | 2001-08-16 | 0d | 0d |  |  |  |  | Eric Marois | AV |
| 83 | 14 | **Prueba total del sistema** |  | 3d | 2014-07-08 | 2014-07-10 |  | 2001-08-16 | 2001-08-21 | 3d | 0d |  | 72h | 2,016 | 2,016 | Eric Marois | AV |
| 84 | 14.1 | Probar y confirmar la funcionabilidad |  | 3d | 2014-07-08 | 2014-07-10 | 82, 62 | 2001-08-16 | 2001-08-21 | 3d | 0d | Arquitecto de red; Analisis de la red de Software; Técnico senior de telecomunicaciones | 72h | 2,016 | 2,016 | Eric Marois | AV |
| 85 | 14.2 | Prueba total del sistema completado | milestone | 0d | 2014-07-10 | 2014-07-10 | 84 | 2001-08-21 | 2001-08-21 | 0d | 0d |  |  |  |  | Eric Marois | AV |
| 86 | 15 | Funcionamiento del sistema de Voz y datos listo | milestone | 0d | 2014-07-10 | 2014-07-10 | 85 | 2001-08-21 | 2001-08-21 | 0d | 0d |  |  |  |  | Eric Marois | AV |
