# Trabajo Final Ms Project

Schedule from MS Project, 2016-01-11 to 2016-06-30, costs in S/..

## Calendars

- Estándar: Mon-Fri 09:00-13:00, 15:00-19:00; Sat-Sun off.
- Calendario obra: Mon-Fri 08:00-13:00, 14:00-17:00; Sat 08:00-13:00; Sun off.

## Resources

| Resource | Group | Rate |
| --- | --- | --- |
| CAPATAZ 1 | Mano de obra | 17.71 |
| OPERARIO | Mano de obra | 16.1 |
| OFICIAL | Mano de obra | 13.81 |
| PEON 1 | Mano de obra | 12.45 |
| OPERADOR EQUIPO LIVIANO | Mano de obra | 12.45 |
| ANDAMIO METALICO | Herramienta y equipo | 15 |
| COMPACTADORA VIBRATORIA TIPO PLANCHA 7 HP | Herramienta y equipo | 12 |
| VIBRADOR DE CONCRETO 4 HP 2.40" | Herramienta y equipo | 5.2 |
| MEZCLADORA DE CONCRETO DE 9 - 11 p3 | Herramienta y equipo | 15 |
| CEPILLADORA ELECTRICA | Herramienta y equipo | 6 |
| SIERRA CIRCULAR | Herramienta y equipo | 4 |
| CORTADORA | Herramienta y equipo | 45 |
| ANDAMIOS DE MADERA | Herramienta y equipo | 15 |
| COMPRESORA DE AIRE | Herramienta y equipo | 55 |
| MAQUINAS DE SOLDAR | Herramienta y equipo | 55 |
| CIZALLA P/CORTE DE FIERRO | Herramienta y equipo | 6 |
| DOBLADORA | Herramienta y equipo | 4 |
| MAQUINAS DE SOLDAR A GASOLINA | Herramienta y equipo | 25 |
| CLAVOS PARA MADERA CON CABEZA DE 3" | Materiales | 4.07 |
| ARENA GRUESA | Materiales | 67.8 |
| CEMENTO PORTLAND TIPO I (42.5 kg) | Materiales | 23.14 |
| PIZARRA ACRILICA | Materiales | 195 |
| LADRILLO KK HECHO A MANO 10 X 14 X 24 cm | Materiales | 1.8 |
| MADERA TORNILLO INCLUYE CORTE PARA ENCOFRADO | Materiales | 2.4 |
| PEON 6 | Materiales | 3 |
| MADERA TORNILLO PARA ANDAMIOS | Materiales | 2.4 |
| TECNOPOR DE 1"X4X8' | Materiales | 17 |
| FRAGUA | Materiales | 2.5 |
| PEGAMENTO PARA CERAMICO (Bol. 25 kg) | Materiales | 18.9 |
| ABRAZADERA DE FIERRO GALVANIZADO 2" | Materiales | 8.9 |
| CERAMICA ANTIDESLIZANTE 0.40X0.40 cm COLOR CLAR | Materiales | 27.5 |
| PIEDRA CHANCADA 1/2" | Materiales | 78.81 |
| COLA SINTETICA | Materiales | 25 |
| CRISTAL TEMPLADO DE 6 mm | Materiales | 113.53 |
| MADERA TORNILLO | Materiales | 6 |
| TRIPLAY LUPUNA 4 x 8 x 4 mm | Materiales | 22 |
| VIDRIO TRANSPARENTE CRUDO DE 6MM | Materiales | 15.38 |
| CLAVOS PARA MADERA CON CABEZA DE 2" | Materiales | 5 |
| LIJA PARA MADERA #100 | Materiales | 1.2 |
| PINTURA LATEX | Materiales | 33.9 |
| SELLADOR BLANCO PARA PINTURA | Materiales | 17.8 |
| LIJA PARA PARED | Materiales | 1.2 |
| ADITIVO IMPERMEABILIZANTE TIPO PINTURA CRISTAL Z | Materiales | 48 |
| TEJA ANDINA (1.15x0.76 m.) | Materiales | 31.9 |
| TIRAFON DE 1/4" X 5" | Materiales | 1 |
| ARANDELA PLASTICA C/CAPUCHON DE 3/16" | Materiales | 0.5 |
| CUMBRERA ARTICUALDA SUPERIOR | Materiales | 18.74 |
| CUMBRERA ARTICUALDA INFERIOR | Materiales | 18.74 |
| CLAVOS PARA MADERA CON CABEZA | Materiales | 4.07 |
| PLANCHA DE ACERO LAC DE 3/16" | Materiales | 256.5 |
| PERNO HEXAGONAL 3/8"X5" | Materiales | 8 |
| MADERA PINO | Materiales | 6 |
| PRERSERVANTE DE MADERA | Materiales | 49.8 |
| PLANCHA DE ACERO LAC DE 1/8" | Materiales | 131 |
| RODAJE AXIAL DE 5/8"X3" | Materiales | 45 |
| LIJA PARA FIERRO | Materiales | 1.2 |
| PINTURA ESMALTE NEGRO | Materiales | 29.66 |
| PINTURA ANTICORROSIVA | Materiales | 29.66 |
| SOLDADURA ELECTRICA CELLOCORD | Materiales | 11.13 |
| TUBO DE FIERRO NEGRO RECTANGULAR DE 2" X 4" X 2.0 mm X 6.0 m | Materiales | 150 |
| TUBO DE FIERRO NEGRO LAF DE 2 1/4" X 6.0 m | Materiales | 99 |
| GARRUCHA DE FIERRO DE 3" E=1" | Materiales | 45 |
| RODAJE AXIAL DE 5/8"X3" | Materiales | 45 |
| LIJA PARA FIERRO | Materiales | 1.2 |
| GASOLINA | Materiales | 12.7 |
| ALAMBRE NEGRO RECOCIDO N° 8 | Materiales | 3.69 |
| CLAVOS PARA CEMENTO DE ACERO CON CABEZA DE 3/4" | Materiales | 4.07 |
| ACERO CORRUGADO fy = 4200 kg/cm2 GRADO 60 | Materiales | 3.35 |
| MADERA TORNILLO INCLUYE CORTE PARA ENCOFRADO | Materiales | 2.4 |
| ALAMBRE NEGRO RECOCIDO N° 16 | Materiales | 3.69 |
| CURVA PVC-SAP LUZ 3/4" | Materiales | 0.5 |
| CINTA AISLANTE | Materiales | 5 |
| CAJA OCTOGONAL GALVANIZADA LIVIANA 4" X 4" X 21/2" | Materiales | 2.5 |
| CABLE TW # 14 AWG 2.5mm2 | Materiales | 1.2 |
| LAMPARA DECORATIVA ADOSADA A PARED (H=1.90) | Materiales | 200 |
| CONEXIONES A CAJA PVC SEL 3/4" | Materiales | 0.5 |
| TUBO PVC SEL ESPIGA CAMPANA 3/4" X 3m | Materiales | 5 |
| LUMINARIA CON CHASIS DE ACERO Y DIFUSOR ACRILICO CON FOCOS AHORRADORES DE 200W | Materiales | 110 |
| LUMINARIA RECTANGULAR CON FLOURESCENTE DE 32W | Materiales | 150 |
| CAJA OCTOGONAL GALVANIZADA LIVIANA DE 4" X 2 1/8" | Materiales | 2.5 |
| CODO PVC SAL 2" X 90° | Materiales | 5.98 |
| INTERRUPTOR TERMOMAGNETICO 3 X20 A | Materiales | 70.64 |
| INTERRUPTOR TERMOMAGNETICO 2X15A | Materiales | 25.36 |
| INTERRUPTOR HORARIO DIGITAL 2X20AMP 220V | Materiales | 250 |
| INTERRUPTOR DIFERENCIAL 30mAMP | Materiales | 95 |
| CABLE TW # 6 AWG - 16mm2 COLOR AMARILLO | Materiales | 12 |
| TABLERO GABINETE METAL BARRA BRONCE 8 POLOS CON MANDIL | Materiales | 200 |
| TUBERIA PVC SAP PRESION C-10 C/R. 1/2" X 5m | Materiales | 13 |
| CINTA TEFLON | Materiales | 1.2 |
| CODO GALVANIZADO ROSCADO DE 1/2" X 90° | Materiales | 1.5 |
| TUBERIA PVC SAP PRESION C-10 C/R. 1/2" X 5m | Materiales | 13 |
| TUBERIA PVC SAP PRESION C-10 C/R. 3/4" X 5m | Materiales | 17 |
| UNION PVC-CLASE 10 DE 1/2" ROSCADA | Materiales | 1 |
| UNION PVC-CLASE 10 DE 3/4" ROSCADA | Materiales | 1.5 |
| NIPLE PVC A-10 3/4" | Materiales | 1.11 |
| PLANCHA DE ACERO LAC DE 1/8" | Materiales | 131 |
| VALVULA COMPUERTA DE 3/4" | Materiales | 41.06 |
| TUBERIA DE FIERRO GALVANIZADO DE 2" | Materiales | 207.61 |
| ELECTRODOS TIPO 6011 CELLOCORD | Materiales | 9.35 |
| SOMBRERO DE VENTILACION PVC-SAL DE 2" | Materiales | 3.5 |
| REDUCCION GALVANIZADA DE 1 1/4" A 1" | Materiales | 4.5 |
| REDUCCION GALVANIZADA DE 1 1/4" A 3/4" | Materiales | 4.1 |
| CODO FIERRO GALVANIZADO DE 1¼" X 90° | Materiales | 8.09 |
| CODO FIERRO GALVANIZADO DE 1½" X 90° | Materiales | 8.94 |
| CODO FIERRO GALVANIZADO DE 2" X 90° | Materiales | 13.32 |
| TEE DE FIERRO GALVANIZADO DE 1 1/4" | Materiales | 20.5 |
| TEE DE FIERRO GALVANIZADO 2" | Materiales | 20.47 |
| UNION UNIVERSAL DE FIERRO GALVANIZADO DE 1¼" | Materiales | 15.57 |
| UNION UNIVERSAL DE FIERRO GALVANIZADO DE 1½" | Materiales | 23.88 |
| UNION UNIVERSAL DE FIERRO GALVANIZADO DE 2" | Materiales | 35.7 |
| TAPON MACHO DE FIERRO GALVANIZADO DE 2" | Materiales | 5 |
| WATER STOP | Materiales | 25 |
| TUBERIA PVC SAL PARA DESAGUE DE 2" X 3m | Materiales | 10 |
| CODO PVC SAL 2" X 90° | Materiales | 5.98 |
| PEGAMENTO PLASTICO PVC | Materiales | 94.92 |
| CAPATAZ 2 | Mano de obra | 17.71 |
| CAPATAZ 3 | Mano de obra | 17.71 |
| CAPATAZ 4 | Mano de obra | 17.71 |
| OPERARIO 2 | Mano de obra | 16.1 |
| OPERARIO 3 | Mano de obra | 16.1 |
| OPERARIO 4 | Mano de obra | 16.1 |
| OPERARIO 5 | Mano de obra | 16.1 |
| OPERARIO 6 | Mano de obra | 16.1 |
| OFICIAL 2 | Mano de obra | 13.81 |
| OFICIAL 3 | Mano de obra | 13.81 |
| OFICIAL 4 | Mano de obra | 13.81 |
| OFICIAL 5 | Mano de obra | 13.81 |
| OFICIAL 6 | Mano de obra | 13.81 |
| OFICIAL 7 | Mano de obra | 13.81 |
| OFICIAL 8 | Mano de obra | 13.81 |
| PEON 2 | Mano de obra | 12.45 |
| PEON 3 | Mano de obra | 12.45 |
| PEON 4 | Mano de obra | 12.45 |
| PEON 5 | Mano de obra | 12.45 |
| PEON 6 | Mano de obra | 12.45 |
| PEON 7 | Mano de obra | 12.45 |
| PEON 8 | Mano de obra | 12.45 |
| PEON 3 |  |  |
| OFICIAL 9 |  |  |
| PERSONAL DE LIMPIEZA Y MANTENIMIENTO |  |  |
| PEON 9 |  |  |
| OPERARIO 7 |  |  |
| OFICIAL 10 |  |  |
| PEON 10 |  |  |
| PEON 11 |  |  |
| PEON 12 |  |  |
| PEON 13 |  |  |
| PEON 14 |  |  |
| PEON 15 |  |  |

## Schedule

| ID | WBS | Task | Type | Duration | Start | Finish | Predecessors | Total slack | Free slack | Calendar | Resources | Work | Cost |
| --- | --- | --- | --- | --- | --- | --- | --- | --- | --- | --- | --- | --- | --- |
| 1 | 1 | **INSTITUTO EDUCATIVA INICIAL** |  | 138.5d? | 2016-01-11 | 2016-06-30 |  | 0d |  | Calendario obra |  | 3884h | 47,723.28 |
| 2 | 1.1 | Inicio Proyecto | milestone | 0d | 2016-01-11 | 2016-01-11 |  | 6.5d | 0d | Calendario obra |  |  |  |
| 3 | 1.2 | **FASE 1 - CENTRO EDUCATIVO** |  | 138.5d? | 2016-01-11 | 2016-06-30 |  | 0d |  | Calendario obra |  | 2636h | 31,973.22 |
| 4 | 1.2.1 | Inicio fase 1 | milestone | 0d | 2016-01-11 | 2016-01-11 | 2 | 6.5d | 0d | Calendario obra |  |  |  |
| 5 | 1.2.2 | **Muros y tabiques de albañileria** |  | 14.5d | 2016-01-11 | 2016-01-28 |  | 6.38d |  | Calendario obra |  | 168h | 2,621.2 |
| 6 | 1.2.2.1 | Inicio | milestone | 0d | 2016-01-11 | 2016-01-11 | 4 | 6.5d | 0d | Calendario obra |  |  |  |
| 7 | 1.2.2.2 | Muros de ladrillo k.k arcilla soga e=0.15 |  | 1w | 2016-01-11 | 2016-01-19 | 6 | 6.5d | 0d | Calendario obra | CAPATAZ 1; OFICIAL | 80h | 1,260.8 |
| 8 | 1.2.2.3 | Muro ladrillo k.k arcilla cabeza e=0.25 |  | 1w | 2016-01-19 | 2016-01-28 | 7SS | 6.25d | 0d | Calendario obra | OFICIAL; CAPATAZ 1 | 80h | 1,260.8 |
| 9 | 1.2.2.4 | Junta de muro con tekcnopor |  | 1d | 2016-01-27 | 2016-01-28 | 8FF | 6.25d | 0d | Calendario obra | PEON 1 | 8h | 99.6 |
| 10 | 1.2.2.5 | Fin | milestone | 0d | 2016-01-28 | 2016-01-28 | 9 | 6.38d | 0d | Calendario obra |  |  |  |
| 11 | 1.2.3 | **Tarrajeo en interiores** |  | 8.5d | 2016-01-28 | 2016-02-08 | 10 | 6.38d |  | Calendario obra |  | 104h | 1,055.28 |
| 12 | 1.2.3.1 | Inicio | milestone | 0d | 2016-01-28 | 2016-01-28 | 10 | 6.38d | 0d | Calendario obra |  |  |  |
| 13 | 1.2.3.2 | Tarrajeo frotachado en interiores muros de albañileria |  | 3d | 2016-01-28 | 2016-02-03 | 12 | 99.88d | 0d | Calendario obra | CAPATAZ 1; OFICIAL; PEON 1 | 72h | 1,055.28 |
| 14 | 1.2.3.3 | Tarrajeo rayado para enchape |  | 4d | 2016-02-01 | 2016-02-08 | 13FS-2d | 100d | 0d | Calendario obra | PEON 14 | 32h |  |
| 15 | 1.2.3.4 | Fin | milestone | 0d | 2016-02-08 | 2016-02-08 | 14 | 100d | 56.12d | Calendario obra |  |  |  |
| 16 | 1.2.4 | **Tarrajeo de exteriores** |  | 5.88d | 2016-01-28 | 2016-02-04 |  | 6.38d |  | Calendario obra |  | 64h | 840.32 |
| 17 | 1.2.4.1 | Inicio | milestone | 0d | 2016-01-28 | 2016-01-28 | 12 | 6.38d | 0d | Calendario obra |  |  |  |
| 18 | 1.2.4.2 | Tarrajeo frotachado en exteriores de albañileria |  | 4d | 2016-01-28 | 2016-02-04 | 17 | 6.38d | 0d | Calendario obra | OFICIAL 2; PEON 2 | 64h | 840.32 |
| 19 | 1.2.4.3 | Fin | milestone | 0d | 2016-02-04 | 2016-02-04 | 18 | 6.38d | 0d | Calendario obra |  |  |  |
| 20 | 1.2.5 | **Tarrajeo en vigas y columnas** |  | 14.88d | 2016-02-04 | 2016-02-23 | 19 | 6.38d |  | Calendario obra |  | 180h | 2,377 |
| 21 | 1.2.5.1 | Inicio | milestone | 0d | 2016-02-04 | 2016-02-04 | 19 | 6.38d | 0.12d | Calendario obra |  |  |  |
| 22 | 1.2.5.2 | Tarrajeo frotachado en vigas |  | 3d | 2016-02-04 | 2016-02-10 | 21 | 6.25d | 0d | Calendario obra | PEON 2; OFICIAL 3 | 48h | 630.24 |
| 23 | 1.2.5.3 | Tarrajeo con impermeabilizante en canaleta pluvial |  | 2d | 2016-02-09 | 2016-02-12 | 22SS | 6.25d | 0d | Calendario obra | PEON 2; OFICIAL 3 | 32h | 420.16 |
| 24 | 1.2.5.4 | Tarrajeo frotachado de alero (fondo y frizo) |  | 2.5d | 2016-02-12 | 2016-02-17 | 23 | 107.88d |  | Calendario obra | OFICIAL 3 | 20h | 276.2 |
| 25 | 1.2.5.5 | Tarrajeo Frotachado de columnas |  | 1w | 2016-02-15 | 2016-02-23 | 23SS | 5.88d | 0d | Calendario obra | PEON 2; OFICIAL 3 | 80h | 1,050.4 |
| 26 | 1.2.5.6 | Fin | milestone | 0d | 2016-02-23 | 2016-02-23 | 25 | 6.12d | 0d | Calendario obra |  |  |  |

| ID | WBS | Task | Type | Duration | Start | Finish | Predecessors | Total slack | Free slack | Calendar | Resources | Work | Cost |
| --- | --- | --- | --- | --- | --- | --- | --- | --- | --- | --- | --- | --- | --- |
| 27 | 1.2.6 | **Vestidura de derrames** |  | 6d | 2016-02-23 | 2016-03-01 |  | 6.12d |  | Calendario obra |  | 32h | 444.92 |
| 28 | 1.2.6.1 | Inicio | milestone | 0d | 2016-02-23 | 2016-02-23 | 26 | 6.12d | 0d | Calendario obra | OFICIAL 3; ADITIVO IMPERMEABILIZANTE TIPO PINTURA CRISTAL Z; PEON 6 |  |  |
| 29 | 1.2.6.2 | Vestidura de derrames ancho de 10 a 20cm |  | 4d | 2016-02-23 | 2016-03-01 | 28 | 6d | 0d | Calendario obra | OFICIAL 3; PEON 6 | 32h | 444.92 |
| 30 | 1.2.6.3 | Fin | milestone | 0d | 2016-03-01 | 2016-03-01 | 29 | 97.25d |  | Calendario obra | OFICIAL 3; ADITIVO IMPERMEABILIZANTE TIPO PINTURA CRISTAL Z; PEON 6 |  |  |
| 31 | 1.2.7 | **Revestimiento con ceramico** |  | 4.62d | 2016-02-23 | 2016-02-29 |  | 6.12d |  | Calendario obra |  | 24h | 298.8 |
| 32 | 1.2.7.1 | Inicio | milestone | 0d | 2016-02-23 | 2016-02-23 | 28SS | 103.25d |  | Calendario obra |  |  |  |
| 33 | 1.2.7.2 | zocalo de enchape ceramica 30x30 |  | 3d | 2016-02-23 | 2016-02-29 | 29SS | 6d | 0d | Calendario obra | PEON 3 | 24h | 298.8 |
| 34 | 1.2.7.3 | Fin | milestone | 0d | 2016-02-29 | 2016-02-29 | 33 | 6d | 0d | Calendario obra |  |  |  |
| 35 | 1.2.8 | **Base de apoyo para mueble de lavadero** |  | 5.88d | 2016-02-15 | 2016-02-22 |  | 104.5d |  | Calendario obra |  | 120h | 1,704.4 |
| 36 | 1.2.8.1 | Inicio | milestone | 0d | 2016-02-15 | 2016-02-15 | 25SS | 106.5d | 0d | Calendario obra |  |  |  |
| 37 | 1.2.8.2 | Muro ladrillo k.k arcilla de canto e=0.10 |  | 1d | 2016-02-15 | 2016-02-16 | 36 | 106.5d | 0d | Calendario obra | PEON 3; CAPATAZ 2; PEON 4 | 24h | 340.88 |
| 38 | 1.2.8.3 | Losa de apoyo para mueble de lavadero, concreto e=0.10m |  | 1d | 2016-02-16 | 2016-02-17 | 37SS | 105.75d | 0d | Calendario obra | PEON 3; CAPATAZ 2; PEON 4 | 24h | 340.88 |
| 39 | 1.2.8.4 | Losa de apoyo para mueble de lavadero, encofrado y desencofrado |  | 2d | 2016-02-17 | 2016-02-19 | 38SS | 105.12d | 0d | Calendario obra | PEON 3; CAPATAZ 2; PEON 4 | 48h | 681.76 |
| 40 | 1.2.8.5 | Losa de apoyo para mueble de lavadero acero de refuerzo fy=4200 kg/cm2 |  | 1d | 2016-02-19 | 2016-02-22 | 39SS | 104.5d | 0d | Calendario obra | PEON 3; CAPATAZ 2; PEON 4 | 24h | 340.88 |
| 41 | 1.2.8.6 | Fin | milestone | 0d | 2016-02-22 | 2016-02-22 | 40 | 104.5d |  | Calendario obra |  |  |  |
| 42 | 1.2.9 | **Pisos y veredas** |  | 31.5d | 2016-02-29 | 2016-04-07 |  | 6d |  | Calendario obra |  | 552h | 7,216 |
| 43 | 1.2.9.1 | Inicio | milestone | 0d | 2016-02-29 | 2016-02-29 | 26, 34 | 6d | 0.12d | Calendario obra | PEON 4; PEON 3; OPERARIO 3 |  |  |
| 44 | 1.2.9.2 | Piso de cemento de 4"pulido, coloreado y bruñado cada 1mx1m |  | 3d | 2016-02-29 | 2016-03-04 | 43SS | 5.88d | 1.38d | Calendario obra | PEON 4; PEON 3; OPERARIO 3 | 72h | 984 |
| 45 | 1.2.9.3 | Piso de cemento de 4"frotachado |  | 3d | 2016-03-07 | 2016-03-10 | 44SS | 5.5d | 0.12d | Calendario obra | PEON 4; PEON 3; OPERARIO 3 | 72h | 984 |
| 46 | 1.2.9.4 | Piso ceramica antideslizante 40cmx40cm |  | 4d | 2016-03-11 | 2016-03-18 | 45 | 28.75d | 0d | Calendario obra | PEON 4; PEON 3; OPERARIO 3 | 96h | 1,312 |
| 47 | 1.2.9.5 | Contrapiso |  | 3d | 2016-03-16 | 2016-03-21 | 45SS | 3d | 0d | Calendario obra | PEON 4; PEON 3; OPERARIO 3 | 72h | 984 |
| 48 | 1.2.9.6 | Veredas interiores de concreto fc=175 kg/cm2 e=4"pasta 1:2 |  | 3d | 2016-03-21 | 2016-03-24 | 47SS | 5d | 2d | Calendario obra | PEON 4; PEON 3; OPERARIO 3 | 72h | 984 |
| 49 | 1.2.9.7 | Veredas exteriores de concreto fc=175 kg/cm2 e=4"pasta 1:2 |  | 3d | 2016-03-28 | 2016-03-31 | 48SS | 3d | 0.12d | Calendario obra | PEON 4; PEON 3; OPERARIO 3 | 72h | 984 |
| 50 | 1.2.9.8 | Encofrado y desencofrado de veredas |  | 3d | 2016-04-01 | 2016-04-06 | 49 | 68.12d |  | Calendario obra | PEON 14 | 24h |  |
| 51 | 1.2.9.9 | Junta de dilatacion de veredas |  | 3d | 2016-04-04 | 2016-04-07 | 49SS | 1d | 0d | Calendario obra | PEON 4; PEON 3; OPERARIO 3 | 72h | 984 |
| 52 | 1.2.9.10 | Fin | milestone | 0d | 2016-04-07 | 2016-04-07 | 51 | 1.62d | 0d | Calendario obra | PEON 4; PEON 3; OPERARIO 3 |  |  |

| ID | WBS | Task | Type | Duration | Start | Finish | Predecessors | Total slack | Free slack | Constraint | Calendar | Resources | Work | Cost |
| --- | --- | --- | --- | --- | --- | --- | --- | --- | --- | --- | --- | --- | --- | --- |
| 53 | 1.2.10 | **Zocalo y contrazocalos** |  | 5.25d | 2016-04-07 | 2016-04-14 |  | 1.62d |  |  | Calendario obra |  | 64h | 1,030.4 |
| 54 | 1.2.10.1 | Inicio | milestone | 0d | 2016-04-07 | 2016-04-07 | 52 | 1.62d | 0.12d |  | Calendario obra |  |  |  |
| 55 | 1.2.10.2 | Contrazocalo cemento sin colorear h=15cm (interiores) |  | 2d | 2016-04-08 | 2016-04-12 | 54 | 1d | 0d |  | Calendario obra | OPERARIO 3; OPERARIO 4 | 32h | 515.2 |
| 56 | 1.2.10.3 | Contrazocalo cemento sin colorear h=15cm (exteriores) |  | 2d | 2016-04-12 | 2016-04-14 | 55SS | 1.62d | 0d |  | Calendario obra | OPERARIO 3; OPERARIO 4 | 32h | 515.2 |
| 57 | 1.2.10.4 | Fin | milestone | 0d | 2016-04-14 | 2016-04-14 | 56 | 2.38d | 0d |  | Calendario obra |  |  |  |
| 58 | 1.2.11 | **Carpinteria de madera** |  | 4.38d | 2016-04-14 | 2016-04-20 |  | 10d |  |  | Calendario obra |  | 40h | 257.6 |
| 59 | 1.2.11.1 | Inicio | milestone | 0d | 2016-04-14 | 2016-04-14 | 57 | 10d | 0d |  | Calendario obra |  |  |  |
| 60 | 1.2.11.2 | Puerta apanelada inc. Instalacion |  | 1.25d | 2016-04-14 | 2016-04-18 | 59 | 57.5d | 0d |  | Calendario obra | OPERARIO 4; OPERARIO 5 | 16h | 257.6 |
| 61 | 1.2.11.3 | Puerta contraplacada inc. Instalacion |  | 1d | 2016-04-14 | 2016-04-15 | 60SS | 58.25d | 0.75d |  | Calendario obra | PEON 14 | 8h |  |
| 62 | 1.2.11.4 | Ventana de madera tornillo/inc. Instalacion |  | 1d | 2016-04-18 | 2016-04-19 | 61 | 57.5d | 0d |  | Calendario obra | PEON 14 | 8h |  |
| 63 | 1.2.11.5 | Piazarra acrilica de 2.40x1.20 inc. Instalacion |  | 1d | 2016-04-19 | 2016-04-20 | 62SS | 57.5d | 0d |  | Calendario obra | PEON 11 | 8h |  |
| 64 | 1.2.11.6 | Fin | milestone | 0d | 2016-04-20 | 2016-04-20 | 63 | 57.5d |  |  | Calendario obra |  |  |  |
| 65 | 1.2.12 | **Carpinteria metalica** |  | 8d | 2016-04-14 | 2016-04-25 |  | 10d |  |  | Calendario obra |  | 48h | 128.8 |
| 66 | 1.2.12.1 | Inicio | milestone | 0d | 2016-04-14 | 2016-04-14 | 59SS | 10d | 0d |  | Calendario obra |  |  |  |
| 67 | 1.2.12.2 | Puerta metalica para baño dos puertas, inc. Instalacion |  | 4d | 2016-04-14 | 2016-04-21 | 66 | 55.88d | 0d | finish no earlier than 2016-04-07 | Calendario obra | PEON 9 | 32h |  |
| 68 | 1.2.12.3 | Puerta metalica para baño una puerta, inc. Instalacion |  | 1d | 2016-04-20 | 2016-04-21 | 67SS | 54.62d | 0.25d |  | Calendario obra | PEON 9 | 8h |  |
| 69 | 1.2.12.4 | Varilla de seguridad en ventanas |  | 1d | 2016-04-22 | 2016-04-25 | 68SS | 53.88d | 0d |  | Calendario obra | OPERARIO 5 | 8h | 128.8 |
| 70 | 1.2.12.5 | Fin | milestone | 0d | 2016-04-25 | 2016-04-25 | 69 | 53.88d |  |  | Calendario obra |  |  |  |
| 71 | 1.2.13 | **Cerrajeria** |  | 8d | 2016-04-14 | 2016-04-25 |  | 8d |  |  | Calendario obra |  | 40h | 708.4 |
| 72 | 1.2.13.1 | Inicio | milestone | 0d | 2016-04-14 | 2016-04-14 | 66SS | 10d | 0.12d |  | Calendario obra |  |  |  |
| 73 | 1.2.13.2 | Bisagra aluminizada capuchina de 3 1/2"x31/2" (3 por puerta) |  | 1d | 2016-04-14 | 2016-04-15 | 72 | 9.88d | 0d |  | Calendario obra | CAPATAZ 3 | 8h | 141.68 |
| 74 | 1.2.13.3 | Bisagra aluminizada capuchina de 3x3" (ventanas) |  | 1d | 2016-04-15 | 2016-04-18 | 73SS | 9.25d | 0.88d |  | Calendario obra | CAPATAZ 3 | 8h | 141.68 |
| 75 | 1.2.13.4 | Cerrojo de aluminio 2"para ventanas |  | 1d | 2016-04-18 | 2016-04-19 | 74SS | 9.88d | 0d |  | Calendario obra | CAPATAZ 3 | 8h | 141.68 |
| 76 | 1.2.13.5 | Cerradura forte dos golpes |  | 1d | 2016-04-21 | 2016-04-22 | 75SS | 8.5d | 0d |  | Calendario obra | CAPATAZ 3 | 8h | 141.68 |
| 77 | 1.2.13.6 | Cerradura perilla de pomo color acero |  | 1d | 2016-04-22 | 2016-04-25 | 76SS | 7.88d | 0d |  | Calendario obra | CAPATAZ 3 | 8h | 141.68 |
| 78 | 1.2.13.7 | Fin | milestone | 0d | 2016-04-25 | 2016-04-25 | 77 | 8d | 0d |  | Calendario obra |  |  |  |

| ID | WBS | Task | Type | Duration | Start | Finish | Predecessors | Total slack | Free slack | Calendar | Resources | Work | Cost |
| --- | --- | --- | --- | --- | --- | --- | --- | --- | --- | --- | --- | --- | --- |
| 79 | 1.2.14 | **Vidrios** |  | 1.25d? | 2016-04-25 | 2016-04-26 |  | 8d |  | Calendario obra |  | 8h | 99.6 |
| 80 | 1.2.14.1 | Inicio | milestone | 0d | 2016-04-25 | 2016-04-25 | 72SS, 78 | 8d | 0d | Calendario obra |  |  |  |
| 81 | 1.2.14.2 | Vidrio incoloro 6mm incluido instalacion |  | 1d? | 2016-04-25 | 2016-04-26 | 80 | 8d | 0d | Calendario obra | PEON 8 | 8h | 99.6 |
| 82 | 1.2.14.3 | Fin | milestone | 0d | 2016-04-26 | 2016-04-26 | 81 | 8d | 0d | Calendario obra |  |  |  |
| 83 | 1.2.15 | **Pintura** |  | 45.75d | 2016-04-26 | 2016-06-22 |  | 6.88d |  | Calendario obra |  | 480h | 5,478 |
| 84 | 1.2.15.1 | Inicio | milestone | 0d | 2016-04-26 | 2016-04-26 | 57SS, 82 | 8d | 0.12d | Calendario obra |  |  |  |
| 85 | 1.2.15.2 | Pintura latex en muros interiores (2 manos) |  | 3d | 2016-04-26 | 2016-05-02 | 84 | 7.88d | 0.38d | Calendario obra | PEON 4; PEON 5 | 48h | 597.6 |
| 86 | 1.2.15.3 | Pintura latex en muros exteriores (2 manos) |  | 6d | 2016-05-02 | 2016-05-11 | 85SS | 7.5d | 0.88d | Calendario obra | PEON 4; PEON 5 | 96h | 1,195.2 |
| 87 | 1.2.15.4 | Pintura latex color claro en vigas y columna (2manos) |  | 7d | 2016-05-10 | 2016-05-23 | 86SS | 6.88d | 0d | Calendario obra | PEON 4; PEON 5 | 104h | 1,294.8 |
| 88 | 1.2.15.5 | Pintura impermeabilizante, canaleta pluvial (2 manos) |  | 7d | 2016-05-18 | 2016-05-31 | 87SS | 14.25d | 1d | Calendario obra | PEON 4; PEON 5 | 80h | 996 |
| 89 | 1.2.15.6 | Pintura latex canaleta fluvial fondo y frizo (2manos) |  | 3d | 2016-05-30 | 2016-06-02 | 88SS | 14.25d | 0.12d | Calendario obra | PEON 5 | 24h | 298.8 |
| 90 | 1.2.15.7 | Pintura barniz en carpinteria de madera (puertas y ventanas) (2 manos) |  | 1d | 2016-06-03 | 2016-06-06 | 89 | 14.25d | 0d | Calendario obra | PEON 4; PEON 5 | 16h | 199.2 |
| 91 | 1.2.15.8 | Pintura oleo en contrazocalo (2 manos) |  | 5d | 2016-06-03 | 2016-06-13 | 90SS | 14.25d |  | Calendario obra | PEON 11 | 40h |  |
| 92 | 1.2.15.9 | Pintura latex color claro en cielorraso (2manos) |  | 9d | 2016-06-06 | 2016-06-22 | 87 | 6.88d | 0d | Calendario obra | PEON 5 | 72h | 896.4 |
| 93 | 1.2.15.10 | Fin | milestone | 0d | 2016-06-22 | 2016-06-22 | 92 | 6.88d |  | Calendario obra |  |  |  |
| 94 | 1.2.16 | **Cielorrasos** |  | 3.38d | 2016-04-14 | 2016-04-19 |  | 2.38d |  | Calendario obra |  | 16h |  |
| 95 | 1.2.16.1 | Inicio | milestone | 0d | 2016-04-14 | 2016-04-14 | 57SS | 2.38d | 0d | Calendario obra |  |  |  |
| 96 | 1.2.16.2 | Cielo raso con yeso con cinta |  | 2d | 2016-04-14 | 2016-04-19 | 95 | 1.62d | 0d | Calendario obra | PEON 11 | 16h |  |
| 97 | 1.2.16.3 | Fin | milestone | 0d | 2016-04-19 | 2016-04-19 | 96 | 58.5d |  | Calendario obra |  |  |  |
| 98 | 1.2.17 | **Cobertura** |  | 54.62d | 2016-04-14 | 2016-06-21 |  | 5.12d |  | Calendario obra |  | 640h | 6,948 |
| 99 | 1.2.17.1 | Inicio | milestone | 0d | 2016-04-14 | 2016-04-14 | 95SS | 5.12d | 3.38d | Calendario obra |  |  |  |
| 100 | 1.2.17.2 | Cobertura de plancha decorativa de fibrocemento tipo teja andina |  | 3d | 2016-04-19 | 2016-04-25 | 99, 96 | 1.62d | 0d | Calendario obra | OPERARIO 4; PEON 7; PEON 8 | 72h | 984 |
| 101 | 1.2.17.3 | Cumbrera tipo teja andina |  | 12d | 2016-04-25 | 2016-05-23 | 100 | 31.38d |  | Calendario obra | PEON 15 | 96h |  |
| 102 | 1.2.17.4 | Tijeral de madera N1 |  | 12d | 2016-04-25 | 2016-05-16 | 100SS | 1d | 0d | Calendario obra | OPERARIO 4; PEON 7; PEON 8 | 200h | 2,577.6 |
| 103 | 1.2.17.5 | Tijeral de madera N2 |  | 9d | 2016-05-10 | 2016-05-25 | 102SS | 1d | 0d | Calendario obra | PEON 7; PEON 8 | 128h | 1,593.6 |
| 104 | 1.2.17.6 | Anclaje para tijerales de madera |  | 9d | 2016-05-23 | 2016-06-07 | 103SS | 1d |  | Calendario obra | PEON 8 | 72h | 896.4 |
| 105 | 1.2.17.7 | Correa de madera de 2x3" para cobertura |  | 9d | 2016-06-06 | 2016-06-21 | 104SS | 0d |  | Calendario obra | PEON 8 | 72h | 896.4 |
| 106 | 1.2.17.8 | Fin | milestone | 0d | 2016-06-21 | 2016-06-21 | 105 | 0.12d | 0d | Calendario obra |  |  |  |

| ID | WBS | Task | Type | Duration | Start | Finish | Predecessors | Total slack | Free slack | Calendar | Resources | Work | Cost |
| --- | --- | --- | --- | --- | --- | --- | --- | --- | --- | --- | --- | --- | --- |
| 107 | 1.2.18 | **Drenaje Pluvial** |  | 7.25d | 2016-06-21 | 2016-06-30 |  | 0d |  | Calendario obra |  | 40h | 498 |
| 108 | 1.2.18.1 | Inicio | milestone | 0d | 2016-06-21 | 2016-06-21 | 106 | 0.12d | 0d | Calendario obra |  |  |  |
| 109 | 1.2.18.2 | Canal concreto fc=175 kg/cm2 |  | 1d | 2016-06-22 | 2016-06-23 | 108 | 0d |  | Calendario obra | PEON 6 | 8h | 99.6 |
| 110 | 1.2.18.3 | Canal encofrado y desencofrado |  | 3d | 2016-06-23 | 2016-06-29 | 109 | 0d |  | Calendario obra | PEON 6 | 24h | 298.8 |
| 111 | 1.2.18.4 | Canal rejilla metalica |  | 1d | 2016-06-29 | 2016-06-30 | 110 | 0d |  | Calendario obra | PEON 6 | 8h | 99.6 |
| 112 | 1.2.18.5 | Fin | milestone | 0d | 2016-06-30 | 2016-06-30 | 111 | 0d |  | Calendario obra |  |  |  |
| 113 | 1.2.19 | **Equipamiento y mobiliario** |  | 3.12d | 2016-06-21 | 2016-06-25 |  | 4.12d |  | Calendario obra |  | 16h | 266.5 |
| 114 | 1.2.19.1 | Inicio | milestone | 0d | 2016-06-21 | 2016-06-21 | 108SS | 4.25d | 0.12d | Calendario obra |  |  |  |
| 115 | 1.2.19.2 | Equipamiento de institucion educativa |  | 2d | 2016-06-22 | 2016-06-24 | 114 | 4.12d | 0d | Calendario obra | OPERARIO 6 | 16h | 257.6 |
| 116 | 1.2.19.3 | Material educativo |  | 3d | 2016-06-22 | 2016-06-25 | 115SS | 4.12d | 0d | Calendario obra | ABRAZADERA DE FIERRO GALVANIZADO 2" |  | 8.9 |
| 117 | 1.2.19.4 | Fin | milestone | 0d | 2016-06-25 | 2016-06-25 | 116 | 4.12d | 0d | Calendario obra |  |  |  |
| 118 | 1.2.19.5 | Fin fase 1 | milestone | 0d | 2016-06-25 | 2016-06-25 | 117 | 4.12d |  | Calendario obra |  |  |  |
| 119 | 1.3 | **FASE 2 - CERCO PERIMETRICO** |  | 27.75d | 2016-01-28 | 2016-03-02 |  | 42d |  | Calendario obra |  | 408h | 4,110.24 |
| 120 | 1.3.1 | Inicio fase 2 | milestone | 0d | 2016-01-28 | 2016-01-28 | 8 | 42d | 0d | Calendario obra |  |  |  |
| 121 | 1.3.2 | **Muros y tabiques de albañileria** |  | 5.88d | 2016-01-28 | 2016-02-04 |  | 42d |  | Calendario obra |  | 64h | 796.8 |
| 122 | 1.3.2.1 | Inicio | milestone | 0d | 2016-01-28 | 2016-01-28 | 8SS, 120 | 42d | 0d | Calendario obra |  |  |  |
| 123 | 1.3.2.2 | Muros de soga con ladrillo de concreto con cemento-cal-arena |  | 4d | 2016-01-28 | 2016-02-04 | 122 | 42d | 0d | Calendario obra | PEON 5; PEON 6 | 64h | 796.8 |
| 124 | 1.3.2.3 | Fin | milestone | 0d | 2016-02-04 | 2016-02-04 | 123 | 42.12d | 0d | Calendario obra |  |  |  |
| 125 | 1.3.3 | **Tarrajeo de exteriores** |  | 17.25d | 2016-02-04 | 2016-02-25 |  | 42.12d |  | Calendario obra |  | 160h | 1,992 |
| 126 | 1.3.3.1 | Inicio | milestone | 0d | 2016-02-04 | 2016-02-04 | 124 | 42.12d | 0d | Calendario obra |  |  |  |
| 127 | 1.3.3.2 | Tarrajeo frotachado en muros de albañileria |  | 4d | 2016-02-04 | 2016-02-11 | 126 | 100.88d | 0d | Calendario obra | PEON 4; PEON 6; PEON 7 | 96h | 1,195.2 |
| 128 | 1.3.3.3 | Tarrajeo frotachado de sobrecimientos |  | 4d | 2016-02-18 | 2016-02-25 | 127SS | 100.88d | 0d | Calendario obra | PEON 6 | 32h | 398.4 |
| 129 | 1.3.3.4 | Tarrajeo frotachado muros de fachada |  | 4d | 2016-02-18 | 2016-02-25 | 128SS | 100.88d | 0d | Calendario obra | PEON 7 | 32h | 398.4 |
| 130 | 1.3.3.5 | Fin | milestone | 0d | 2016-02-25 | 2016-02-25 | 129 | 100.88d |  | Calendario obra |  |  |  |

| ID | WBS | Task | Type | Duration | Start | Finish | Predecessors | Total slack | Free slack | Calendar | Resources | Work | Cost |
| --- | --- | --- | --- | --- | --- | --- | --- | --- | --- | --- | --- | --- | --- |
| 131 | 1.3.4 | **Tarrajeo en vigas y columnas** |  | 6d | 2016-02-04 | 2016-02-11 |  | 42.12d |  | Calendario obra |  | 64h |  |
| 132 | 1.3.4.1 | Inicio | milestone | 0d | 2016-02-04 | 2016-02-04 | 126 | 42.12d | 0.12d | Calendario obra |  |  |  |
| 133 | 1.3.4.2 | Tarrajeo frotachado en vigas |  | 4d | 2016-02-04 | 2016-02-11 | 132 | 42d | 0d | Calendario obra | PEON 11 | 32h |  |
| 134 | 1.3.4.3 | Tarrajeo frotachado de columnas |  | 4d | 2016-02-04 | 2016-02-11 | 133SS | 42d | 0d | Calendario obra | PEON 10 | 32h |  |
| 135 | 1.3.4.4 | Fin | milestone | 0d | 2016-02-11 | 2016-02-11 | 134 | 42.12d | 0d | Calendario obra |  |  |  |
| 136 | 1.3.5 | **Carpinteria metalica y herreria** |  | 1d | 2016-02-11 | 2016-02-12 |  | 111.12d |  | Calendario obra |  |  |  |
| 137 | 1.3.5.1 | Inicio | milestone | 0d | 2016-02-11 | 2016-02-11 | 135 | 111.12d | 0d | Calendario obra |  |  |  |
| 138 | 1.3.5.2 | Puerta metalica de 3.40x3 inc.intalacion |  | 1d | 2016-02-12 | 2016-02-12 | 137 | 111.12d | 0d | Calendario obra |  |  |  |
| 139 | 1.3.5.3 | Puerta metalica de 1.20x3 inc. Intalacion |  | 1d | 2016-02-12 | 2016-02-12 | 138SS | 111.12d | 0d | Calendario obra |  |  |  |
| 140 | 1.3.5.4 | Fin | milestone | 0d | 2016-02-12 | 2016-02-12 | 139 | 111.12d |  | Calendario obra |  |  |  |
| 141 | 1.3.6 | **Cerrajeria** |  | 1d | 2016-02-11 | 2016-02-12 |  | 111.12d |  | Calendario obra |  |  |  |
| 142 | 1.3.6.1 | Inicio | milestone | 0d | 2016-02-11 | 2016-02-11 | 137 | 111.12d | 0d | Calendario obra |  |  |  |
| 143 | 1.3.6.2 | Cerradura forte dos golpes (suministro+instalacion) |  | 1d | 2016-02-12 | 2016-02-12 | 142 | 111.12d | 0d | Calendario obra |  |  |  |
| 144 | 1.3.6.3 | Fin | milestone | 0d | 2016-02-12 | 2016-02-12 | 143 | 111.12d |  | Calendario obra |  |  |  |
| 145 | 1.3.7 | **Pintura** |  | 15.88d | 2016-02-11 | 2016-03-02 |  | 42.12d |  | Calendario obra |  | 120h | 1,321.44 |
| 146 | 1.3.7.1 | Inicio | milestone | 0d | 2016-02-11 | 2016-02-11 | 135SS | 42.12d | 0.12d | Calendario obra |  |  |  |
| 147 | 1.3.7.2 | Pintura latex en muros exteriores (2 manos) |  | 3d | 2016-02-12 | 2016-02-17 | 146 | 41.38d | 0d | Calendario obra | CAPATAZ 3; PEON 6 | 48h | 723.84 |
| 148 | 1.3.7.3 | Pintura latex en muros interiores (2 manos) |  | 3d | 2016-02-17 | 2016-02-22 | 147SS | 42.38d | 0d | Calendario obra | PEON 6 | 24h | 298.8 |
| 149 | 1.3.7.4 | Pintura latex color claro en vigas y columna (2manos) |  | 3d | 2016-02-26 | 2016-03-02 | 148SS | 41.38d | 0d | Calendario obra | PEON 6 | 24h | 298.8 |
| 150 | 1.3.7.5 | Pintura esmalte sintetico en sobrecimiento (2manos) |  | 3d | 2016-02-26 | 2016-03-02 | 149SS | 41.38d | 0d | Calendario obra | PEON 10 | 24h |  |
| 151 | 1.3.7.6 | Fin | milestone | 0d | 2016-03-02 | 2016-03-02 | 150 | 42.12d | 0d | Calendario obra |  |  |  |
| 152 | 1.3.7.7 | Fin fase 2 | milestone | 0d | 2016-03-02 | 2016-03-02 | 151 | 42.12d | 12.62d | Calendario obra |  |  |  |
| 153 | 1.4 | **FASE 3 - CISTERNA, TANQUE ELEVADO Y CUARTO DE BOMBAS** |  | 48.25d | 2016-03-18 | 2016-05-17 |  | 29.5d |  | Calendario obra |  | 800h | 11,639.82 |
| 154 | 1.4.1 | Inicio fase 3 | milestone | 0d | 2016-03-18 | 2016-03-18 | 46, 152 | 29.5d | 0d | Calendario obra |  |  |  |

| ID | WBS | Task | Type | Duration | Start | Finish | Predecessors | Total slack | Free slack | Constraint | Calendar | Resources | Work | Cost |
| --- | --- | --- | --- | --- | --- | --- | --- | --- | --- | --- | --- | --- | --- | --- |
| 155 | 1.4.2 | **Muros y tabiques de albañileria** |  | 1d | 2016-03-18 | 2016-03-19 |  | 29.5d |  |  | Calendario obra |  |  | 3 |
| 156 | 1.4.2.1 | Inicio | milestone | 0d | 2016-03-18 | 2016-03-18 | 154 | 29.5d | 0d |  | Calendario obra |  |  |  |
| 157 | 1.4.2.2 | Muro de ladrillo k.k arcilla soga e=0.15 |  | 1d | 2016-03-18 | 2016-03-19 | 156 | 29.5d | 0d |  | Calendario obra | PEON 6 |  | 3 |
| 158 | 1.4.2.3 | Fin | milestone | 0d | 2016-03-19 | 2016-03-19 | 157 | 29.5d | 0d |  | Calendario obra |  |  |  |
| 159 | 1.4.3 | **Tarrajeo en interiores** |  | 19.12d | 2016-03-19 | 2016-04-12 |  | 29.5d |  |  | Calendario obra |  | 96h | 1,557.6 |
| 160 | 1.4.3.1 | Inicio | milestone | 0d | 2016-03-19 | 2016-03-19 | 158 | 29.5d | 0d |  | Calendario obra |  |  |  |
| 161 | 1.4.3.2 | Tarrajeo frotachado en interiores muros de albañileria |  | 3d | 2016-03-21 | 2016-03-24 | 160 | 60.25d | 2d |  | Calendario obra | OPERARIO 4; PEON 6 | 24h | 389.4 |
| 162 | 1.4.3.3 | Tarrajeo con impermeabilizante en interior de cisterna |  | 3d | 2016-03-28 | 2016-03-31 | 161SS | 58.25d | 2d |  | Calendario obra | OPERARIO 4; PEON 6 | 24h | 389.4 |
| 163 | 1.4.3.4 | Tarrajeo con impermeabilizante en interior de tanque elevado |  | 3d | 2016-04-04 | 2016-04-07 | 162SS | 56.25d | 0d |  | Calendario obra | OPERARIO 4; PEON 6 | 24h | 389.4 |
| 164 | 1.4.3.5 | Tarrajeo de cielorraso de cuarto de bombas |  | 3d | 2016-04-07 | 2016-04-12 | 163SS | 56.25d | 0d |  | Calendario obra | OPERARIO 4; PEON 6 | 24h | 389.4 |
| 165 | 1.4.3.6 | Fin | milestone | 0d | 2016-04-12 | 2016-04-12 | 164 | 56.38d | 0d |  | Calendario obra |  |  |  |
| 166 | 1.4.4 | **Tarrajeo en exteriores** |  | 7.25d | 2016-04-12 | 2016-04-21 |  | 56.25d |  |  | Calendario obra |  | 112h | 1,609.12 |
| 167 | 1.4.4.1 | Inicio | milestone | 0d | 2016-04-12 | 2016-04-12 | 165 | 56.38d | 0.12d |  | Calendario obra |  |  |  |
| 168 | 1.4.4.2 | Tarrajeo frotachado en exteriores muros de albañileria |  | 4d | 2016-04-13 | 2016-04-20 | 167 | 56.25d | 0d |  | Calendario obra | CAPATAZ 3; OFICIAL 5; OFICIAL 6 | 80h | 1,167.2 |
| 169 | 1.4.4.3 | Tarrajeo frotachado en muros exteriores y fondo de losa - tanque elevado |  | 2d | 2016-04-19 | 2016-04-21 | 168SS+1d | 56.25d | 0d | finish no earlier than 2016-02-19 | Calendario obra | OFICIAL 5; OFICIAL 6 | 32h | 441.92 |
| 170 | 1.4.4.4 | Fin | milestone | 0d | 2016-04-21 | 2016-04-21 | 169 | 56.25d |  |  | Calendario obra |  |  |  |
| 171 | 1.4.5 | **Tarrajeo en vigas y columnas** |  | 4.62d | 2016-03-19 | 2016-03-25 |  | 29.5d |  |  | Calendario obra |  | 16h | 283.36 |
| 172 | 1.4.5.1 | Inicio | milestone | 0d | 2016-03-19 | 2016-03-19 | 160 | 29.5d | 0.38d |  | Calendario obra |  |  |  |
| 173 | 1.4.5.2 | Tarrajeo frotachado en vigas |  | 1d | 2016-03-21 | 2016-03-22 | 172 | 29.12d | 0d |  | Calendario obra | CAPATAZ 3 | 8h | 141.68 |
| 174 | 1.4.5.3 | Tarrajeo frotachado de columnas |  | 1d | 2016-03-24 | 2016-03-25 | 173SS | 29.12d | 0d |  | Calendario obra | CAPATAZ 3 | 8h | 141.68 |
| 175 | 1.4.5.4 | Fin | milestone | 0d | 2016-03-25 | 2016-03-25 | 174 | 29.75d | 0d |  | Calendario obra |  |  |  |
| 176 | 1.4.6 | **Vestidura de derrames** |  | 3.25d | 2016-03-25 | 2016-03-29 |  | 29.12d |  |  | Calendario obra |  | 16h | 283.36 |
| 177 | 1.4.6.1 | Inicio | milestone | 0d | 2016-03-25 | 2016-03-25 | 175 | 29.75d | 0d |  | Calendario obra |  |  |  |
| 178 | 1.4.6.2 | Vestidura de derrames ancho de 10 a 20cm |  | 2d | 2016-03-25 | 2016-03-29 | 177 | 29.12d | 0d |  | Calendario obra | CAPATAZ 3 | 16h | 283.36 |
| 179 | 1.4.6.3 | Fin | milestone | 0d | 2016-03-29 | 2016-03-29 | 178 | 29.12d | 0d |  | Calendario obra |  |  |  |

| ID | WBS | Task | Type | Duration | Start | Finish | Predecessors | Total slack | Free slack | Calendar | Resources | Work | Cost |
| --- | --- | --- | --- | --- | --- | --- | --- | --- | --- | --- | --- | --- | --- |
| 180 | 1.4.7 | **Pisos y veredas** |  | 9.88d | 2016-03-29 | 2016-04-11 |  | 28.62d |  | Calendario obra |  | 112h | 1,543.84 |
| 181 | 1.4.7.1 | Inicio | milestone | 0d | 2016-03-29 | 2016-03-29 | 179 | 29.12d | 0.12d | Calendario obra |  |  |  |
| 182 | 1.4.7.2 | Piso de cemento de 4"pulido, coloreado y bruñado cada 1mx1m |  | 2d | 2016-03-30 | 2016-04-01 | 181 | 29d | 0.88d | Calendario obra | PEON 7; OFICIAL 7 | 32h | 420.16 |
| 183 | 1.4.7.3 | Veredas exteriores de concreto fc=175 kg/cm2 |  | 2d | 2016-04-04 | 2016-04-06 | 182SS | 28.38d | 0d | Calendario obra | PEON 7; OFICIAL 7 | 32h | 420.16 |
| 184 | 1.4.7.4 | Encofrado y desencofrado de veredas |  | 2d | 2016-04-06 | 2016-04-11 | 183 | 28.75d | 0.25d | Calendario obra | CAPATAZ 4 | 16h | 283.36 |
| 185 | 1.4.7.5 | Junta de dilatacion en veredas |  | 2d | 2016-04-07 | 2016-04-11 | 183SS | 28.38d | 0d | Calendario obra | PEON 7; OFICIAL 7 | 32h | 420.16 |
| 186 | 1.4.7.6 | Fin | milestone | 0d | 2016-04-11 | 2016-04-11 | 185 | 28.62d | 0d | Calendario obra | PEON 7; OFICIAL 7 |  |  |
| 187 | 1.4.8 | **Zocalo y contrazocalos** |  | 2.75d | 2016-04-11 | 2016-04-14 |  | 28.5d |  | Calendario obra | PEON 7; OFICIAL 7 | 64h | 840.32 |
| 188 | 1.4.8.1 | Inicio | milestone | 0d | 2016-04-11 | 2016-04-11 | 184, 186 | 28.62d | 0.12d | Calendario obra | PEON 7; OFICIAL 7 |  |  |
| 189 | 1.4.8.2 | Contrazocalo de cemento acabado semipulido pintado al oleo |  | 2d | 2016-04-11 | 2016-04-14 | 188 | 28.38d | 0d | Calendario obra | PEON 7; OFICIAL 7 | 32h | 420.16 |
| 190 | 1.4.8.3 | Fin | milestone | 0d | 2016-04-14 | 2016-04-14 | 189 | 28.5d | 0d | Calendario obra |  |  |  |
| 191 | 1.4.9 | **Carpinteria metalica y herreria** |  | 1.25d | 2016-04-14 | 2016-04-15 |  | 28.5d |  | Calendario obra |  | 32h | 110.48 |
| 192 | 1.4.9.1 | Inicio | milestone | 0d | 2016-04-14 | 2016-04-14 | 190 | 28.5d | 0d | Calendario obra | OFICIAL 9; OFICIAL 8 |  |  |
| 193 | 1.4.9.2 | Ventanas de perfiles de acero y malla galvanizada 1mx0.60m tipo v-5 |  | 1d | 2016-04-14 | 2016-04-15 | 192 | 28.5d | 0d | Calendario obra | OFICIAL 9; OFICIAL 8 | 16h | 110.48 |
| 194 | 1.4.9.3 | Puerta metalica de 0.80x2.10 tipo p-5 |  | 1d | 2016-04-14 | 2016-04-15 | 193SS | 60.88d |  | Calendario obra | PEON 9 | 8h |  |
| 195 | 1.4.9.4 | Escalera de fierro para tanque elevado y cisterna (inc. Instalacion) |  | 1d | 2016-04-14 | 2016-04-15 | 193SS | 28.5d | 0d | Calendario obra | OFICIAL 10 | 8h |  |
| 196 | 1.4.9.5 | Fin | milestone | 0d | 2016-04-15 | 2016-04-15 | 195 | 29.25d | 0d | Calendario obra | OFICIAL 9; OFICIAL 8 |  |  |
| 197 | 1.4.10 | **Cerrajeria** |  | 2.62d | 2016-04-15 | 2016-04-19 |  | 28.5d |  | Calendario obra |  | 16h | 257.6 |
| 198 | 1.4.10.1 | Inicio | milestone | 0d | 2016-04-15 | 2016-04-15 | 196 | 29.25d | 0.12d | Calendario obra | OPERARIO 6 |  |  |
| 199 | 1.4.10.2 | Cerradura forte dos golpes (suministro+instalacion) |  | 1d | 2016-04-15 | 2016-04-18 | 198 | 28.5d | 0d | Calendario obra | OPERARIO 6 | 8h | 128.8 |
| 200 | 1.4.10.3 | Bisagra de acero inoxidable 4x4$ |  | 1d | 2016-04-15 | 2016-04-19 | 199SS | 28.5d | 0d | Calendario obra | OPERARIO 6 | 8h | 128.8 |
| 201 | 1.4.10.4 | Fin | milestone | 0d | 2016-04-19 | 2016-04-19 | 200 | 28.5d | 0d | Calendario obra | OPERARIO 6 |  |  |
| 202 | 1.4.11 | **Pintura** |  | 22.88d | 2016-04-19 | 2016-05-17 |  | 28.25d |  | Calendario obra |  | 336h | 5,151.14 |
| 203 | 1.4.11.1 | Inicio | milestone | 0d | 2016-04-19 | 2016-04-19 | 201 | 28.5d | 0.12d | Calendario obra | OPERARIO 4; OPERARIO 5; OPERARIO 6 |  |  |
| 204 | 1.4.11.2 | Pintura latex, color claro en muros interiores (2manos) |  | 5.25d | 2016-04-19 | 2016-04-28 | 203 | 28.38d | 0.25d | Calendario obra | OPERARIO 4; OPERARIO 5; OPERARIO 6 | 72h | 1,159.2 |
| 205 | 1.4.11.3 | Pintura latex color claro en muros exteriores (2manos) |  | 3d | 2016-04-25 | 2016-04-29 | 204SS | 28.12d | 0.12d | Calendario obra | OPERARIO 6 | 24h | 386.4 |
| 206 | 1.4.11.4 | Pintura latex color claro en vigas y columna (2manos) |  | 3d | 2016-04-29 | 2016-05-05 | 205 | 28.12d | 0.12d | Calendario obra | OPERARIO 5; OPERARIO 6 | 48h | 772.8 |
| 207 | 1.4.11.5 | Pintura latex, color claro en cierlorraso |  | 3.25d | 2016-05-05 | 2016-05-11 | 206 | 28.12d | 0.12d | Calendario obra | ACERO CORRUGADO fy = 4200 kg/cm2 GRADO 60; OPERARIO 4; OPERARIO 5; OPERARIO 6; CAPATAZ 4; ABRAZADERA DE FIERRO GALVANIZADO 2" | 120h | 1,673.54 |
| 208 | 1.4.11.6 | Pintura al oleo en contrazocalos externo |  | 3d | 2016-05-12 | 2016-05-17 | 207 | 28.12d | 0d | Calendario obra | OPERARIO 4; OPERARIO 5; OPERARIO 6 | 72h | 1,159.2 |
| 209 | 1.4.11.7 | Fin | milestone | 0d | 2016-05-17 | 2016-05-17 | 208 | 28.25d | 0d | Calendario obra | OPERARIO 4; OPERARIO 5; OPERARIO 6 |  |  |
| 210 | 1.4.11.8 | Fin fase 3 | milestone | 0d | 2016-05-17 | 2016-05-17 | 209 | 28.25d | 0d | Calendario obra |  |  |  |

| ID | WBS | Task | Type | Duration | Start | Finish | Predecessors | Total slack | Free slack | Calendar | Resources | Work |
| --- | --- | --- | --- | --- | --- | --- | --- | --- | --- | --- | --- | --- |
| 211 | 1.5 | **FASE 4 - VARIOS, LIMPIEZA Y JARDINERIA** |  | 7.25d | 2016-05-17 | 2016-05-26 |  | 28.12d |  | Calendario obra |  | 40h |
| 212 | 1.5.1 | Inicio fase 4 | milestone | 0d | 2016-05-17 | 2016-05-17 | 210 | 28.25d | 0d | Calendario obra |  |  |
| 213 | 1.5.2 | **Varios, limpieza y jardineria** |  | 7.25d | 2016-05-17 | 2016-05-26 |  | 28.12d |  | Calendario obra |  | 40h |
| 214 | 1.5.2.1 | Inicio | milestone | 0d | 2016-05-17 | 2016-05-17 | 212 | 28.25d | 0.12d | Calendario obra |  |  |
| 215 | 1.5.2.2 | Impacto ambiental |  | 1w | 2016-05-18 | 2016-05-26 | 214 | 28.12d | 0d | Calendario obra | PERSONAL DE LIMPIEZA Y MANTENIMIENTO | 40h |
| 216 | 1.5.2.3 | Fin | milestone | 0d | 2016-05-26 | 2016-05-26 | 215 | 28.12d | 0d | Calendario obra |  |  |
| 217 | 1.5.3 | Fin fase 4 | milestone | 0d | 2016-05-26 | 2016-05-26 | 216 | 28.12d | 0d | Calendario obra |  |  |
| 218 | 2 | Fin Proyecto | milestone | 0d | 2016-05-26 | 2016-05-26 | 217 | 28.12d |  | Calendario obra |  |  |
