# PROYECTO: DEMOLICION DE EDIFICIO

Schedule from MS Project, 2016-02-02 to 2016-03-08, costs in S/..

## Calendars

- PROYECTO CEPS: Mon-Fri 09:00-13:00, 15:00-19:00; Sat-Sun off.

## Resources

| Resource | Group | Unit | Rate |
| --- | --- | --- | --- |
| Alberto Espinoza | Ingeniero civil |  | 18.75 |
| Cesar Rodriguez | Jefe de demolicion |  | 12.5 |
| Juan Alvarez | Obrero |  | 10 |
| Dante Castro | Obrero |  | 10 |
| Jorge Poso | Obrero |  | 10 |
| Carlos Vasquez | Obrero |  | 10 |
| Miguel Fernadez | Obrero |  | 10 |
| Jose Peralta | Obrero - Manipulador de maquinaria |  | 10.5 |
| Equipo d seguridad |  | conjunto | 400 |
| Pala cargadora | Equipo |  | 68.75 |
| Herramientas manuales |  | conjunto | 600 |
| Ladrillos |  | millares | 700 |
| Cemento |  | Bolsa 42.5 Kg | 20 |
| Transporte |  |  |  |
| Almuerzo |  |  |  |
| Martillo neumatico |  |  | 61.25 |
| Baño portatil | Equipo |  | 31.25 |
| Camion volquete | Equipo |  | 75 |
| Pedro Garcia | Pintor |  | 10 |
| Guillermo Velazco | Pintor |  | 10 |
| Pintura |  | galones | 35 |

## Schedule

| ID | WBS | Task | Type | Duration | Start | Finish | Predecessors | Total slack | Resources | Work | Cost |
| --- | --- | --- | --- | --- | --- | --- | --- | --- | --- | --- | --- |
| 1 | 1 | Inicio del proyecto | milestone | 0d | 2016-02-02 | 2016-02-02 |  | 0d |  |  |  |
| 2 | 2 | **Actividades preliminares** |  | 2d | 2016-02-02 | 2016-02-03 |  | 0d |  | 52h | 5,079 |
| 3 | 2.1 | Inicio de actividades preliminares | milestone | 0d | 2016-02-02 | 2016-02-02 | 1 | 0d |  |  |  |
| 4 | 2.2 | Cumplir con los requisitos municipales para la demolicion |  | 2d | 2016-02-02 | 2016-02-03 | 3 | 0d | Alberto Espinoza | 16h | 300 |
| 5 | 2.3 | Comprar herramientas |  | 4h | 2016-02-02 | 2016-02-02 | 4SS | 25.12d | Cesar Rodriguez; Herramientas manuales [4 conjunto]; Equipo d seguridad [5 conjunto] | 4h | 4,450 |
| 6 | 2.4 | Preveer daños a construcciones vecinas |  | 2h | 2016-02-02 | 2016-02-02 | 4SS | 0d | Cesar Rodriguez | 2h | 25 |
| 7 | 2.5 | Cortar suministro de servicio publico |  | 1d | 2016-02-02 | 2016-02-02 | 6SS | 0d | Jose Peralta | 8h | 84 |
| 8 | 2.6 | Sellar desagues |  | 4h | 2016-02-02 | 2016-02-02 | 7SS | 0d | Carlos Vasquez | 4h | 40 |
| 9 | 2.7 | Adecuar zona de demolicion |  | 6h | 2016-02-02 | 2016-02-03 | 8 | 0d | Jorge Poso; Juan Alvarez; Dante Castro | 18h | 180 |
| 10 | 2.8 | Fin de actividades preliminares | milestone | 0d | 2016-02-03 | 2016-02-03 | 9 | 0d |  |  |  |
| 11 | 3 | **Acondicionamiento para la ejecucion** |  | 9d | 2016-02-03 | 2016-02-16 |  | 0d |  | 410h | 6,208 |
| 12 | 3.1 | Inicio acondicionamiento | milestone | 0d | 2016-02-03 | 2016-02-03 | 10 | 0d |  |  |  |
| 13 | 3.2 | Cerco provisional |  | 6h | 2016-02-03 | 2016-02-03 | 12 | 0d | Carlos Vasquez; Dante Castro; Juan Alvarez; Almuerzo [0.1%] | 18h | 180 |
| 14 | 3.3 | Movilizacion de equipos |  | 2d | 2016-02-03 | 2016-02-05 | 13SS | 0d | Transporte [0.1%]; Cesar Rodriguez | 16h | 350 |
| 15 | 3.4 | Desmontaje de puertas, ventanas y sobrantes |  | 2d | 2016-02-05 | 2016-02-09 | 14 | 0d | Carlos Vasquez; Jorge Poso; Jose Peralta; Juan Alvarez; Dante Castro; Baño portatil; Almuerzo [0.1%] | 96h | 1,508 |
| 16 | 3.5 | Limpieza del terreno manualmente |  | 5d | 2016-02-09 | 2016-02-16 | 15 | 0d | Carlos Vasquez; Dante Castro; Baño portatil; Jose Peralta; Miguel Fernadez; Juan Alvarez; Jorge Poso; Almuerzo [0.1%] | 280h | 4,170 |
| 17 | 3.6 | Fin acondicionamiento | milestone | 0d | 2016-02-16 | 2016-02-16 | 16 | 0d |  |  |  |
| 18 | 4 | **Demolicion manual** |  | 5d | 2016-02-16 | 2016-02-23 |  | 0d |  | 160h | 2,489 |
| 19 | 4.1 | Inicio demolicion manual | milestone | 0d | 2016-02-16 | 2016-02-16 | 17 | 0d |  |  |  |
| 20 | 4.2 | Demolicion de losas |  | 1.5d | 2016-02-16 | 2016-02-18 | 19 | 0d | Jorge Poso; Jose Peralta; Juan Alvarez; Baño portatil; Almuerzo [0.1%] | 48h | 861 |
| 21 | 4.3 | Demolicion de albañileria |  | 2d | 2016-02-18 | 2016-02-23 | 20 | 0d | Jorge Poso; Dante Castro; Carlos Vasquez; Jose Peralta; Juan Alvarez; Miguel Fernadez; Almuerzo [0.1%]; Baño portatil | 112h | 1,628 |
| 22 | 4.4 | Fin demolicion manual | milestone | 0d | 2016-02-23 | 2016-02-23 | 21 | 0d |  |  |  |
| 23 | 5 | **Demolicion masiva a maquina** |  | 3d | 2016-02-23 | 2016-02-26 |  | 0d |  | 96h | 3,328 |
| 24 | 5.1 | Inicio demolicion a maquina | milestone | 0d | 2016-02-23 | 2016-02-23 | 22 | 0d |  |  |  |
| 25 | 5.2 | Demolicion de columnas, vigas y /o placas |  | 2d | 2016-02-23 | 2016-02-26 | 24 | 0d | Alberto Espinoza; Almuerzo [0.1%]; Baño portatil; Jose Peralta; Martillo neumatico; Miguel Fernadez; Pala cargadora | 96h | 3,328 |
| 26 | 5.3 | Fin demolicion a maquina | milestone | 0d | 2016-02-26 | 2016-02-26 | 25 | 0d |  |  |  |

| ID | WBS | Task | Type | Duration | Start | Finish | Predecessors | Total slack | Resources | Work | Cost |
| --- | --- | --- | --- | --- | --- | --- | --- | --- | --- | --- | --- |
| 27 | 6 | **Eliminacion d material carguio manual volquete** |  | 3d | 2016-02-26 | 2016-03-02 |  | 0d |  | 192h | 6,538 |
| 28 | 6.1 | Inicio eliminacion de material | milestone | 0d | 2016-02-26 | 2016-02-26 | 26 | 0d |  |  |  |
| 29 | 6.2 | Eliminacion d escombros y residuos |  | 2d | 2016-02-26 | 2016-03-01 | 28 | 0d | Almuerzo [0.1%]; Baño portatil; Jorge Poso; Miguel Fernadez; Pala cargadora; Camion volquete; Jose Peralta | 96h | 3,388 |
| 30 | 6.3 | Limpieza del terreno |  | 3d | 2016-02-26 | 2016-03-02 | 29SS | 0d | Almuerzo [0.1%]; Baño portatil; Camion volquete; Dante Castro; Juan Alvarez | 96h | 3,150 |
| 31 | 6.4 | Fin eliminacion de material | milestone | 0d | 2016-03-02 | 2016-03-02 | 30 | 0d |  |  |  |
| 32 | 7 | **Construccion muro de cerco** |  | 3.75d | 2016-03-02 | 2016-03-07 |  | 0d |  | 218h | 4,512 |
| 33 | 7.1 | Inicio construccion del muro | milestone | 0d | 2016-03-02 | 2016-03-02 | 31 | 0d |  |  |  |
| 34 | 7.2 | Construir cerco de concreto |  | 2d | 2016-03-02 | 2016-03-04 | 33 | 0d | Alberto Espinoza; Cesar Rodriguez; Carlos Vasquez; Dante Castro; Jorge Poso; Ladrillos [2 millares]; Almuerzo [0.1%]; Baño portatil; Cemento [1 Bolsa 42.5 Kg]; Juan Alvarez; Jose Peralta; Miguel Fernadez | 144h | 3,538 |
| 35 | 7.3 | Tarrajeo del cerco |  | 1d | 2016-03-04 | 2016-03-07 | 34 | 0d | Almuerzo [0.1%]; Cesar Rodriguez; Jose Peralta; Juan Alvarez; Jorge Poso; Miguel Fernadez; Dante Castro; Carlos Vasquez | 56h | 674 |
| 36 | 7.4 | Pintado de fachada |  | 6h | 2016-03-07 | 2016-03-07 | 35 | 0d | Cesar Rodriguez; Pedro Garcia; Guillermo Velazco; Pintura [3 galones] | 18h | 300 |
| 37 | 7.5 | Fin de construccion del muro | milestone | 0d | 2016-03-07 | 2016-03-07 | 36 | 0d |  |  |  |
| 38 | 8 | **Proceso de verificacion** |  | 0.62d | 2016-03-07 | 2016-03-08 |  | 0d |  | 36h | 575 |
| 39 | 8.1 | Inicio proceso de verificacion | milestone | 0d | 2016-03-07 | 2016-03-07 | 37 | 0d |  |  |  |
| 40 | 8.2 | Verificacion del estado de los edificios vecinos |  | 3h | 2016-03-08 | 2016-03-08 | 39 | 0d | Alberto Espinoza; Cesar Rodriguez | 6h | 93.75 |
| 41 | 8.3 | Limpieza de lso ambientes exteriores de la demolicion |  | 5h | 2016-03-08 | 2016-03-08 | 40SS | 0d | Baño portatil; Almuerzo [0.1%]; Jorge Poso; Juan Alvarez; Miguel Fernadez; Carlos Vasquez; Dante Castro | 30h | 481.25 |
| 42 | 8.4 | Fin proceso de verificacion | milestone | 0d | 2016-03-08 | 2016-03-08 | 41 | 0d |  |  |  |
| 43 | 9 | Fin del proyecto | milestone | 0d | 2016-03-08 | 2016-03-08 | 42 | 0d |  |  |  |
