# IMPLEMENTACION DE OFICINAS( de la cruz - galvez)

Schedule from MS Project, 2016-02-02 to 2016-08-22, costs in S.

## Calendars

- Estándar: Mon-Fri 09:00-13:00, 15:00-19:00; Sat-Sun off.

## Resources

| Resource | Rate |
| --- | --- |
| Arq. Victor Pimentel | 40 |
| Arq. Ferreyra | 35 |
| Ing. Farromeque | 30 |
| Ing. Galvez | 35 |
| Ing. Guerra | 25 |
| Juan Perez | 10 |
| Cuadrilla 1 | 8 |
| Cuadrilla 2 | 8 |
| Cuadrilla 3 | 8 |
| Daniel Galvez | 20 |
| Anllelo De La Cruz | 20 |

## Schedule

| ID | WBS | Task | Type | Duration | Start | Finish | Predecessors | Total slack | Resources | Work | Cost |
| --- | --- | --- | --- | --- | --- | --- | --- | --- | --- | --- | --- |
| 1 | 1 | **Desarrollo de Ingenierias** |  | 7d | 2016-02-02 | 2016-02-10 |  | 0d |  | 56h | 2,240 |
| 2 | 1.1 | Inicio fase | milestone | 0d | 2016-02-02 | 2016-02-02 |  | 0d |  |  |  |
| 3 | 1.2 | Entrega de proyecto por especialidades |  | 7d | 2016-02-02 | 2016-02-10 | 2 | 0d | Arq. Victor Pimentel | 56h | 2,240 |
| 4 | 1.3 | Fin de fase | milestone | 0d | 2016-02-10 | 2016-02-10 | 3 | 0d |  |  |  |
| 5 | 2 | **Obras preliminares** |  | 46d | 2016-02-10 | 2016-04-14 |  | 0d |  | 368h | 2,944 |
| 6 | 2.1 | Inicio fase | milestone | 0d | 2016-02-10 | 2016-02-10 | 4 | 0d |  |  |  |
| 7 | 2.2 | Desmontaje de elementos existentes (tabiqueria de drywall, equipamiento existente, puertas) y eliminación de desmonte |  | 4d | 2016-02-11 | 2016-02-16 | 6 | 0d | Cuadrilla 2 | 32h | 256 |
| 8 | 2.3 | Movilizacion de Equipos y Herramientas |  | 11d | 2016-02-17 | 2016-03-02 | 7 | 0d | Cuadrilla 1 | 88h | 704 |
| 9 | 2.4 | Trazo, niveles y replanteo |  | 6d | 2016-03-03 | 2016-03-10 | 8 | 0d | Cuadrilla 1 | 48h | 384 |
| 10 | 2.5 | Ingreso de Materiales a Obra |  | 25d | 2016-03-11 | 2016-04-14 | 9 | 0d | Cuadrilla 2 | 200h | 1,600 |
| 11 | 2.6 | Fin de fase | milestone | 0d | 2016-03-14 | 2016-03-14 | 10SS+2d | 0d |  |  |  |
| 12 | 3 | **Arquitectura** |  | 71d | 2016-03-14 | 2016-06-21 |  | 0d |  | 1272h | 14,240 |
| 13 | 3.1 | Inicio fase | milestone | 0d | 2016-03-14 | 2016-03-14 | 11 | 0d |  |  |  |
| 14 | 3.2 | Picado de pisos y paredes para tuberias de agua, desague, energía, HVAC, alarma |  | 8d | 2016-03-15 | 2016-03-24 | 13 | 0d | Cuadrilla 2 | 64h | 512 |
| 15 | 3.3 | Resane de muros y pisos |  | 9d | 2016-03-25 | 2016-04-06 | 14 | 98d | Cuadrilla 2 | 72h | 576 |
| 16 | 3.4 | Tarrajeo de Cielo raso y paredes |  | 4d | 2016-03-25 | 2016-03-30 | 14 | 103d | Cuadrilla 3 | 32h | 256 |
| 17 | 3.5 | Picado y nivelacion de falso piso |  | 10d | 2016-03-15 | 2016-03-28 | 14SS | 0d | Cuadrilla 1 | 80h | 640 |
| 18 | 3.6 | Habilitación de tabiqueria de drywall en el local |  | 8d | 2016-03-29 | 2016-04-07 | 17 | 0d | Anllelo De La Cruz; Daniel Galvez | 128h | 2,560 |
| 19 | 3.7 | Colocación de lana de Vidrio |  | 8d | 2016-04-08 | 2016-04-19 | 18 | 89d | Juan Perez | 64h | 640 |
| 20 | 3.8 | Refuerzo de Madera en tabiqueria de drywall |  | 6d | 2016-04-08 | 2016-04-15 | 18 | 91d | Daniel Galvez | 48h | 960 |
| 21 | 3.9 | Masillado, lijado y pintura en tabiqueria de drywall |  | 18d | 2016-04-08 | 2016-05-03 | 18 | 0d | Cuadrilla 1 | 144h | 1,152 |
| 22 | 3.10 | Habilitación de tijerales para falso cielo raso de drywall |  | 8d | 2016-05-04 | 2016-05-13 | 21 | 0d | Cuadrilla 2 | 64h | 512 |
| 23 | 3.11 | Habilitación de Cenefa de Drywall |  | 3d | 2016-05-16 | 2016-05-18 | 22 | 0d | Cuadrilla 3 | 24h | 192 |
| 24 | 3.12 | Instalación de baldosas en falso cielo raso |  | 10d | 2016-05-19 | 2016-06-01 | 23 | 58d | Cuadrilla 1 | 80h | 640 |
| 25 | 3.13 | Instalación de pisos en los ambientes |  | 12d | 2016-05-16 | 2016-05-31 | 23SS | 59d | Cuadrilla 2 | 96h | 768 |
| 26 | 3.14 | Habilitación de contrazocalo en todos los ambientes |  | 10d | 2016-05-16 | 2016-05-27 | 23SS | 0d | Cuadrilla 3 | 80h | 640 |
| 27 | 3.15 | Instalación de puertas |  | 6d | 2016-05-30 | 2016-06-06 | 26 | 55d | Daniel Galvez | 48h | 960 |
| 28 | 3.16 | Instalación de tabiqueria de vidrio |  | 6d | 2016-05-30 | 2016-06-06 | 26 | 0d | Anllelo De La Cruz | 48h | 960 |
| 29 | 3.17 | Colocación de laminado en tabiqueria de vidrio |  | 4d | 2016-06-07 | 2016-06-10 | 28 | 0d | Anllelo De La Cruz | 32h | 640 |
| 30 | 3.18 | Instalación de muebles en zona de kitchenette |  | 7d | 2016-06-07 | 2016-06-15 | 29SS | 48d | Cuadrilla 3 | 56h | 448 |
| 31 | 3.19 | Instalacion de Mobiliario fijo en todo el local |  | 11d | 2016-06-07 | 2016-06-21 | 29SS | 44d | Cuadrilla 1 | 88h | 704 |
| 32 | 3.20 | Colocación de sillas de oficina |  | 3d | 2016-06-07 | 2016-06-09 | 29SS | 0d | Daniel Galvez | 24h | 480 |
| 33 | 3.21 | Fin de fase | milestone | 0d | 2016-06-09 | 2016-06-09 | 32 | 0d |  |  |  |

| ID | WBS | Task | Type | Duration | Start | Finish | Predecessors | Total slack | Free slack | Resources | Work | Cost |
| --- | --- | --- | --- | --- | --- | --- | --- | --- | --- | --- | --- | --- |
| 34 | 4 | **Instalaciones Sanitarias** |  | 13d | 2016-06-09 | 2016-06-28 |  | 39d |  |  | 184h | 2,000 |
| 35 | 4.1 | Inicio fase | milestone | 0d | 2016-06-09 | 2016-06-09 | 33 | 39d | 0d |  |  |  |
| 36 | 4.2 | Enductado de tuberias de Agua |  | 10d | 2016-06-10 | 2016-06-23 | 35 | 39d | 0d | Cuadrilla 2 | 80h | 640 |
| 37 | 4.3 | Enductado de tuberias de Desague |  | 10d | 2016-06-10 | 2016-06-23 | 36SS | 39d | 0d | Cuadrilla 2 | 80h | 640 |
| 38 | 4.4 | Instalacion de Equipos sanitarios |  | 2d | 2016-06-24 | 2016-06-27 | 37 | 39d | 0d | Ing. Farromeque | 16h | 480 |
| 39 | 4.5 | Pruebas de instalaciones sanitarias |  | 1d | 2016-06-28 | 2016-06-28 | 38 | 39d | 0d | Ing. Farromeque | 8h | 240 |
| 40 | 4.6 | Fin fase | milestone | 0d | 2016-06-28 | 2016-06-28 | 39 | 39d |  |  |  |  |
| 41 | 5 | **Instalaciones Electricas** |  | 32d | 2016-06-09 | 2016-07-25 |  | 20d |  |  | 776h | 13,544 |
| 42 | 5.1 | Inicio fase | milestone | 0d | 2016-06-09 | 2016-06-09 | 33 | 20d | 0d |  |  |  |
| 43 | 5.2 | Enductado de tuberias de energía en piso |  | 6d | 2016-06-10 | 2016-06-17 | 42 | 33d | 0d | Ing. Guerra | 48h | 1,200 |
| 44 | 5.3 | Enductado de tuberias de energía en pared |  | 6d | 2016-06-10 | 2016-06-17 | 42 | 20d | 0d | Ing. Galvez | 48h | 1,680 |
| 45 | 5.4 | Enductado de tuberias para luminarias |  | 6d | 2016-06-10 | 2016-06-17 | 42 | 26d | 0d | Daniel Galvez | 48h | 960 |
| 46 | 5.5 | Enductado de tuberias para dispositivos de seguridad y alarma |  | 6d | 2016-06-10 | 2016-06-17 | 42 | 46d |  | Cuadrilla 2 | 48h | 384 |
| 47 | 5.6 | Cableado de tomacorrientes en piso |  | 13d | 2016-06-20 | 2016-07-06 | 43 | 33d |  | Daniel Galvez | 104h | 2,080 |
| 48 | 5.7 | Cableado de interruptores en pared |  | 13d | 2016-06-20 | 2016-07-06 | 44 | 20d | 0d | Anllelo De La Cruz | 104h | 2,080 |
| 49 | 5.8 | Cableado de luminarias |  | 13d | 2016-06-20 | 2016-07-06 | 45 | 26d | 0d | Cuadrilla 1 | 104h | 832 |
| 50 | 5.9 | Cableado de Alimentadores |  | 13d | 2016-07-07 | 2016-07-25 | 48 | 20d |  | Daniel Galvez | 104h | 2,080 |
| 51 | 5.10 | Instalación de base para tablero de energía |  | 4d | 2016-07-07 | 2016-07-12 | 48 | 25d | 0d | Anllelo De La Cruz | 32h | 640 |
| 52 | 5.11 | Instalación de llaves en tableros de energía |  | 4d | 2016-07-13 | 2016-07-18 | 51 | 25d |  | Anllelo De La Cruz | 32h | 640 |
| 53 | 5.12 | Instalación de Luminarias |  | 6d | 2016-07-07 | 2016-07-14 | 49 | 26d | 0d | Cuadrilla 2 | 48h | 384 |
| 54 | 5.13 | Instalación de lamparas de emergencia |  | 6d | 2016-07-07 | 2016-07-14 | 53SS | 26d | 0d | Cuadrilla 2 | 48h | 384 |
| 55 | 5.14 | Pruebas de energía |  | 1d | 2016-07-15 | 2016-07-15 | 54 | 26d | 0d | Ing. Guerra | 8h | 200 |
| 56 | 5.15 | Fin de fase | milestone | 0d | 2016-07-15 | 2016-07-15 | 55 | 26d |  |  |  |  |
| 57 | 6 | **Instalación Mecanica - Aire Acondicionado** |  | 28d | 2016-06-09 | 2016-07-19 |  | 0d |  |  | 224h | 2,016 |
| 58 | 6.1 | Inicio fase | milestone | 0d | 2016-06-09 | 2016-06-09 | 33 | 0d |  |  |  |  |
| 59 | 6.2 | Instalación de condensadores |  | 14d | 2016-06-10 | 2016-06-29 | 58 | 0d |  | Cuadrilla 1 | 112h | 896 |
| 60 | 6.3 | Instalación de ductos y rejillas para aire acondicionado |  | 8d | 2016-06-30 | 2016-07-11 | 59 | 0d |  | Juan Perez | 64h | 640 |
| 61 | 6.4 | Instalacion de equipos de aire acondicionado |  | 6d | 2016-07-12 | 2016-07-19 | 60 | 0d |  | Juan Perez | 48h | 480 |
| 62 | 6.5 | Fin de fase | milestone | 0d | 2016-07-19 | 2016-07-19 | 61 | 0d |  |  |  |  |

| ID | WBS | Task | Type | Duration | Start | Finish | Predecessors | Total slack | Free slack | Resources | Work | Cost |
| --- | --- | --- | --- | --- | --- | --- | --- | --- | --- | --- | --- | --- |
| 63 | 7 | **Sistema Contra Incendio** |  | 24d | 2016-07-19 | 2016-08-22 |  | 0d |  |  | 208h | 2,096 |
| 64 | 7.1 | Inicio fase | milestone | 0d | 2016-07-19 | 2016-07-19 | 62 | 0d |  |  |  |  |
| 65 | 7.2 | Entubado de tuberias de ACI |  | 13d | 2016-07-20 | 2016-08-05 | 64 | 0d |  | Cuadrilla 1 | 104h | 832 |
| 66 | 7.3 | Instalación de rociadores |  | 11d | 2016-08-08 | 2016-08-22 | 65 | 0d |  | Cuadrilla 2 | 88h | 704 |
| 67 | 7.4 | Pruebas de ACI |  | 1d | 2016-08-08 | 2016-08-08 | 65 | 9d | 0d | Ing. Galvez | 8h | 280 |
| 68 | 7.5 | Pruebas de ACI final |  | 1d | 2016-08-09 | 2016-08-09 | 67 | 9d | 0d | Ing. Galvez | 8h | 280 |
| 69 | 7.6 | Fin de fase | milestone | 0d | 2016-08-09 | 2016-08-09 | 68 | 9d |  |  |  |  |
| 70 | 8 | **Sistema de Seguridad y Alarma** |  | 22d | 2016-07-19 | 2016-08-18 |  | 2d |  |  | 256h | 2,560 |
| 71 | 8.1 | Inicio fase | milestone | 0d | 2016-07-19 | 2016-07-19 | 62 | 2d | 0d |  |  |  |
| 72 | 8.2 | Cableado para dispositivos de seguridad y alarma |  | 10d | 2016-07-20 | 2016-08-02 | 71 | 14d |  | Cuadrilla 3 | 80h | 640 |
| 73 | 8.3 | Cableado para camaras |  | 10d | 2016-07-20 | 2016-08-02 | 71 | 2d | 0d | Cuadrilla 2 | 80h | 640 |
| 74 | 8.4 | Instalación de camaras y dispositivos de seguridad |  | 10d | 2016-08-03 | 2016-08-16 | 73 | 2d | 0d | Juan Perez | 80h | 800 |
| 75 | 8.5 | Pruebas de seguridad y alarma |  | 2d | 2016-08-17 | 2016-08-18 | 74 | 2d | 0d | Ing. Farromeque | 16h | 480 |
| 76 | 8.6 | Fin del proyecto | milestone | 0d | 2016-08-18 | 2016-08-18 | 75 | 2d |  |  |  |  |
