# Mi Vivienda

Schedule from MS Project, 2016-02-01 to 2016-04-25, costs in S/..
Hewlett-Packard

## Calendars

- Vivienda de bajo costo: Mon-Sat 08:00-13:00, 15:00-18:00; Sun off. Exceptions (off unless hours are given): 2016-03-24 to 2016-03-25 (Semana Santa).

## Resources

| Resource | Unit | Rate |
| --- | --- | --- |
| Operario |  | 12 |
| Peón |  | 6 |
| Oficial |  | 7 |
| Operador de equipo liviano |  | 12 |
| Piedra grande 8" | m3 | 21.8 |
| Hormigón | m3 | 22 |
| Cemento portland 42.5 kg tipo 1 | bolsa | 16 |
| Agua | m3 | 9 |
| Mezcladora tambor 11p3 18Hp |  | 13 |
| Alambre negro recocido n° 16 | kg | 4 |
| Acero corrugado | kg | 2 |
| Clavos cabeza 3" | kg | 4 |
| Madera Tornillo | p2 | 3.9 |
| Piedra chancada 1/2" | m3 | 43 |
| Arena Gruesa | m3 | 23 |
| Winche |  | 12 |
| Vibradora de concreto |  | 6 |
| Ladrillo para techo | unidad | 2.4 |
| Bloque silícico | pieza | 0.12 |
| Cal hidratada | bolsa | 5.2 |
| Alambre negro recocido n° 8 | kg | 4 |

## Schedule

| ID | WBS | Task | Type | Duration | Start | Finish | Predecessors | Baseline start | Baseline finish | Baseline duration | Total slack | Free slack | Constraint | Resources | Work | Cost | Baseline cost |
| --- | --- | --- | --- | --- | --- | --- | --- | --- | --- | --- | --- | --- | --- | --- | --- | --- | --- |
| 1 | 1 | Inicio Vivienda | milestone | 0d | 2016-02-01 | 2016-02-01 |  | 2016-02-01 | 2016-02-01 |  | 3d | 0d |  |  |  |  |  |
| 2 | 2 | **Movimiento de tierras** |  | 14d | 2016-02-01 | 2016-02-16 |  | 2016-02-01 | 2016-02-16 | 14d | 3d |  |  |  | 152h | 1,152 | 1,152 |
| 3 | 2.1 | Inicio movimieto de tierras | milestone | 0d | 2016-02-01 | 2016-02-01 | 1 | 2016-02-01 | 2016-02-01 |  | 3d | 0d |  |  |  |  |  |
| 4 | 2.2 | Limpieza de terreno manual |  | 5d | 2016-02-01 | 2016-02-05 | 3 | 2016-02-01 | 2016-02-05 | 5d | 3d | 0d |  | Operario; Peón | 80h | 720 | 720 |
| 5 | 2.3 | Excavación de zanjas para cimientos |  | 9d | 2016-02-06 | 2016-02-16 | 4 | 2016-02-06 | 2016-02-16 | 9d | 3d | 0d |  | Peón | 72h | 432 | 432 |
| 6 | 2.4 | Fin movimiento de tierras | milestone | 0d | 2016-02-16 | 2016-02-16 | 5 | 2016-02-16 | 2016-02-16 |  | 3d | 0d |  |  |  |  |  |
| 7 | 3 | **Concreto Simple** |  | 3d | 2016-02-16 | 2016-02-19 |  | 2016-02-16 | 2016-02-19 | 3d | 3d |  |  |  | 120h | 3,211.5 | 3,211.5 |
| 8 | 3.1 | Inicio concreto simple | milestone | 0d | 2016-02-16 | 2016-02-16 | 6 | 2016-02-16 | 2016-02-16 |  | 3d | 0d |  |  |  |  |  |
| 9 | 3.2 | Cimientos corridos |  | 3d | 2016-02-17 | 2016-02-19 | 8 | 2016-02-17 | 2016-02-19 | 3d | 3d | 0d |  | Operador de equipo liviano; Operario; Oficial; Peón; Piedra grande 8" [12.5 m3]; Cemento portland 42.5 kg tipo 1 [76.25 bolsa]; Hormigón [21.75 m3]; Agua [4.5 m3]; Mezcladora tambor 11p3 18Hp | 120h | 3,211.5 | 3,211.5 |
| 10 | 3.3 | Fin concreto simple | milestone | 0d | 2016-02-19 | 2016-02-19 | 9 | 2016-02-19 | 2016-02-19 |  | 3d | 0d |  |  |  |  |  |
| 11 | 4 | **Concreto Armado** |  | 40d? | 2016-02-20 | 2016-04-08 |  | 2016-02-20 | 2016-04-08 | 40d? | 3d |  |  |  | 816h | 69,278.1 | 69,278.1 |
| 12 | 4.1 | Inicio concreto armado |  | 1d? | 2016-02-20 | 2016-02-20 | 10 | 2016-02-20 | 2016-02-20 | 1d? | 3d | 0d |  |  |  |  |  |
| 13 | 4.2 | **Columnas** |  | 17d | 2016-02-20 | 2016-03-11 |  | 2016-02-20 | 2016-03-11 | 17d | 0d |  |  |  | 384h | 53,791.66 | 53,791.66 |
| 14 | 4.2.1 | Inicio Columnas | milestone | 0d | 2016-02-20 | 2016-02-20 | 12 | 2016-02-20 | 2016-02-20 |  | 3d | 0d |  |  |  |  |  |
| 15 | 4.2.2 | Acero |  | 5d | 2016-02-22 | 2016-02-26 | 14 | 2016-02-22 | 2016-02-26 | 5d | 3d | 0d |  | Operario; Oficial; Alambre negro recocido n° 16 [79.2 kg]; Acero corrugado [1412.4 kg] | 80h | 3,901.6 | 3,901.6 |
| 16 | 4.2.3 | Encofrado y desencofrado |  | 5d | 2016-02-27 | 2016-03-03 | 15 | 2016-02-27 | 2016-03-03 | 5d | 3d |  |  | Operario; Oficial; Clavos cabeza 3" [6.12 kg]; Madera Tornillo [185.76 p2]; Alambre negro recocido n° 8 [10800 kg] | 80h | 44,708.94 | 44,708.94 |
| 17 | 4.2.4 | Concreto |  | 4d | 2016-03-08 | 2016-03-11 | 16 | 2016-03-08 | 2016-03-11 | 4d | 0d |  | start no earlier than 2016-03-08 | Operador de equipo liviano; Operario; Oficial; Peón; Piedra chancada 1/2" [14.4 m3]; Arena Gruesa [8 m3]; Cemento portland 42.5 kg tipo 1 [136 bolsa]; Agua [2.88 m3]; Vibradora de concreto; Mezcladora tambor 11p3 18Hp; Winche | 224h | 5,181.12 | 5,181.12 |
| 18 | 4.2.5 | Fin columnas | milestone | 0d | 2016-03-11 | 2016-03-11 | 17 | 2016-03-11 | 2016-03-11 |  | 0d |  |  |  |  |  |  |
| 19 | 4.3 | **Losas Aligeradas** |  | 22d | 2016-03-11 | 2016-04-08 |  | 2016-03-11 | 2016-04-08 | 22d | 0d |  |  |  | 432h | 15,486.44 | 15,486.44 |
| 20 | 4.3.1 | Inicio Losas aligeradas | milestone | 0d | 2016-03-11 | 2016-03-11 | 18 | 2016-03-11 | 2016-03-11 |  | 0d |  |  |  |  |  |  |
| 21 | 4.3.2 | Encofrado y desencofrado |  | 9d | 2016-03-12 | 2016-03-22 | 20 | 2016-03-12 | 2016-03-22 | 9d | 0d |  |  | Operario; Oficial; Peón; Clavos cabeza 3" [13.2 kg]; Madera Tornillo [618 p2] | 216h | 4,263 | 4,263 |
| 22 | 4.3.3 | Ladrillo hueco de arcilla |  | 2d | 2016-03-28 | 2016-03-29 | 21 | 2016-03-23 | 2016-03-29 | 4d | 0d | 23d |  | Operario; Oficial; Peón; Ladrillo para techo [1575 unidad]; Winche | 64h | 4,372 | 4,372 |
| 23 | 4.3.4 | Acero |  | 6d | 2016-04-01 | 2016-04-07 | 21 | 2016-03-23 | 2016-04-07 | 12d | 0d |  |  | Operario; Oficial; Alambre negro recocido n° 16 [79.2 kg]; Acero corrugado [1412.4 kg] | 96h | 4,053.6 | 4,053.6 |
| 24 | 4.3.5 | Concreto |  | 1d | 2016-04-08 | 2016-04-08 | 23 | 2016-04-08 | 2016-04-08 | 1d | 0d |  | start no earlier than 2016-04-01 | Operador de equipo liviano; Operario; Oficial; Peón; Piedra chancada 1/2" [10.8 m3]; Arena Gruesa [6 m3]; Cemento portland 42.5 kg tipo 1 [102 bolsa]; Agua [2.16 m3]; Vibradora de concreto; Mezcladora tambor 11p3 18Hp; Winche | 56h | 2,797.84 | 2,797.84 |
| 25 | 4.3.6 | Fin Losas aligeradas | milestone | 0d | 2016-04-08 | 2016-04-08 | 24 | 2016-04-08 | 2016-04-08 |  | 14d |  |  |  |  |  |  |
| 26 | 4.3.7 | Fin Concreto armado | milestone | 0d | 2016-04-08 | 2016-04-08 | 24 | 2016-04-08 | 2016-04-08 |  | 0d |  |  |  |  |  |  |

Notes:
- 4: Su duración dependerá del tipo de suelo. (se utiliza pico, pala y carretilla)
- 5: Su duración dependerá por el tipo de suelo. (se utiliza pico, pala y carretilla)
- 9: Mezcla 1:10 cemento-hormigón 30% piedra
- 15: Corrugado con resistencia a la compresión de 4200 kg/cm2. (GRADO 60)
- 17: Se utilizó concreto con resistencia de 175 kg/cm2
- 22: Se utilizó ladrillo hueco de espesor de 20 cm
- 23: Se utilizó acero corrugado de grado 60.
- 24: Se utilizó concreto de 210 kg/cm2

| ID | WBS | Task | Type | Duration | Start | Finish | Predecessors | Baseline start | Baseline finish | Baseline duration | Total slack | Resources | Work | Cost | Baseline cost |
| --- | --- | --- | --- | --- | --- | --- | --- | --- | --- | --- | --- | --- | --- | --- | --- |
| 27 | 5 | **Muros y Tabiques** |  | 14d | 2016-04-08 | 2016-04-25 |  | 2016-04-08 | 2016-04-25 | 14d | 0d |  | 224h | 2,739.42 | 2,739.42 |
| 28 | 5.1 | Inicio Muros y tabiques | milestone | 0d | 2016-04-08 | 2016-04-08 | 26 | 2016-04-08 | 2016-04-08 |  | 0d |  |  |  |  |
| 29 | 5.2 | Muro cabeza |  | 14d | 2016-04-09 | 2016-04-25 | 28 | 2016-04-09 | 2016-04-25 | 14d | 0d | Operario; Peón; Clavos cabeza 3" [0.68 kg]; Arena Gruesa [1.97 m3]; Bloque silícico [2856 pieza]; Cemento portland 42.5 kg tipo 1 [13.87 bolsa]; Cal hidratada [1.8 bolsa]; Madera Tornillo [19.72 p2]; Agua [2.72 m3] | 224h | 2,739.42 | 2,739.42 |
| 30 | 5.3 | Fin Muros y Tabiques | milestone | 0d | 2016-04-25 | 2016-04-25 | 29 | 2016-04-25 | 2016-04-25 |  | 0d |  |  |  |  |
| 31 | 5.4 | Fin vivienda | milestone | 0d | 2016-04-25 | 2016-04-25 | 30 | 2016-04-25 | 2016-04-25 |  | 0d |  |  |  |  |

Notes:
- 29: Se utilizó como unidad de albañilería el ladrillo king kong para muros estructurales
